Schedule from MS Project, 2026-01-05 to 2027-03-16, costs in $.

## Calendars

- Proyecto (Calendario Proyecto): Mon-Fri 09:00-13:00, 14:00-18:00; Sat-Sun off. Exceptions (off unless hours are given): 2026-04-03 (Viernes Santo), 2026-04-04 (Sábado Santo), 2026-05-01 (Día Nacional del Trabajo), 2026-05-21 (Día de las Glorias Navales), 2026-06-21 (Día Nacional de los Pueblos Indígenas), 2026-06-29 (San Pedro y San Pablo), 2026-07-16 (Virgen del Carmen), 2026-08-15 (Asunción de la Virgen), 2026-08-18 (Día de la Independencia Nacional), 2026-09-19 (Día de las Glorias del Ejército de Chile), 2026-10-12 (Día del Encuentro de Dos Mundos), 2026-10-31 (Día Nacional de las Iglesias Evangélicas y Protestantes), 2026-11-01 (Día de Todos los Santos), 2026-12-08 to 2026-12-09 (Inmaculada Concepción de la Virgen), 2026-12-25 (Navidad).

## Resources

| Resource |
| --- |
| Desarrollador Backend |
| Arquitecto de Software |
| QA Tester |
| Ingeniero de Datos |
| DevOps Engineer |
| Jefe de Proyecto |
| Técnico de Campo |
| Desarrollador Frontend |
| Diseñador UI/UX |
| Especialista Seguridad |
| Asesor Legal |
| Diseñador Instruccional |
| Diseñador Gráfico |
| Editor de Video |
| Capacitador |
| Técnico de Soporte |

## Schedule

| ID | WBS | Task | Duration | Start | Finish | Predecessors | Total slack | Free slack | Resources | Work | Cost |
| --- | --- | --- | --- | --- | --- | --- | --- | --- | --- | --- | --- |
| 1 | 1 | **SISTEMA TELEMETRIA** | 301.5d | 2026-01-05 09:00 | 2027-03-16 13:00 |  | 0d |  |  | 4180h | 94,352,000 |
| 2 | 1.1 | **Inicio del Proyecto** | 301.5d | 2026-01-05 09:00 | 2027-03-16 13:00 |  | 0d |  |  | 4180h | 94,352,000 |
| 3 | 1.1.1 | **OBJETIVO 1.0: Desarrollar Sistema de Adquisición y Transmisión de Datos de Telemetría** | 91d | 2026-01-05 09:00 | 2026-05-13 18:00 |  | 0d |  |  | 1148h | 24,856,000 |
| 4 | 1.1.1.1 | **Entregable 1.1: Middleware de Integración de Datos** | 21.5d | 2026-01-05 09:00 | 2026-02-03 13:00 |  | 0d |  |  | 296h | 7,400,000 |
| 5 | 1.1.1.1.1 | **Paquete de Trabajo 1.1.1: Módulo de recepción de señales desde hardware** | 5d | 2026-01-05 09:00 | 2026-01-09 18:00 |  | 0d |  |  | 60h | 1,456,000 |
| 6 | 1.1.1.1.1.1 | 1.1.1.1 Análisis de protocolos de comunicación con microcontroladores | 8h | 2026-01-05 09:00 | 2026-01-05 18:00 |  | 0d |  | Desarrollador Backend | 8h | 224,000 |
| 7 | 1.1.1.1.1.2 | 1.1.1.2 Diseño de APIs REST para recepción de datos | 16h | 2026-01-05 09:00 | 2026-01-06 18:00 |  | 16.5d | 0d | Arquitecto de Software | 16h | 448,000 |
| 8 | 1.1.1.1.1.3 | 1.1.1.3 Implementación de endpoints de recepción | 24h | 2026-01-06 09:00 | 2026-01-08 18:00 | 6 | 0d |  | Desarrollador Backend | 24h | 672,000 |
| 9 | 1.1.1.1.1.4 | 1.1.1.4 Testing de integración con hardware simulado | 8h | 2026-01-09 09:00 | 2026-01-09 18:00 | 7, 8 | 16.5d |  | QA Tester | 8h |  |
| 10 | 1.1.1.1.1.5 | 1.1.1.5 Documentación de API | 4h | 2026-01-09 09:00 | 2026-01-09 13:00 | 8 | 0d |  | Desarrollador Backend | 4h | 112,000 |
| 11 | 1.1.1.1.2 | **Paquete de Trabajo 1.1.2: Procesador de validación y transformación de datos** | 7.5d | 2026-01-05 09:00 | 2026-01-14 13:00 |  | 4.5d |  |  | 72h | 1,792,000 |
| 12 | 1.1.1.1.2.1 | 1.1.2.1 Diseño de algoritmos de conversión de señales análogas | 16h | 2026-01-05 09:00 | 2026-01-06 18:00 |  | 15.5d | 0d | Ingeniero de Datos | 16h | 448,000 |
| 13 | 1.1.1.1.2.2 | 1.1.2.2 Implementación de validadores de datos | 16h | 2026-01-09 14:00 | 2026-01-13 13:00 | 10 | 0d |  | Desarrollador Backend | 16h | 448,000 |
| 14 | 1.1.1.1.2.3 | 1.1.2.3 Desarrollo de transformadores de unidades (4-20mA a L/s) | 24h | 2026-01-07 09:00 | 2026-01-09 18:00 | 12 | 15.5d | 1.5d | Ingeniero de Datos | 24h | 672,000 |
| 15 | 1.1.1.1.2.4 | 1.1.2.4 Testing de precisión de conversiones | 8h | 2026-01-13 14:00 | 2026-01-14 13:00 | 12, 13, 14 | 14d |  | QA Tester | 8h |  |
| 16 | 1.1.1.1.2.5 | 1.1.2.5 Optimización de rendimiento | 8h | 2026-01-13 14:00 | 2026-01-14 13:00 | 13 | 0d |  | Desarrollador Backend | 8h | 224,000 |
| 17 | 1.1.1.1.3 | **Paquete de Trabajo 1.1.3: API de integración con microcontroladores** | 10.5d | 2026-01-07 09:00 | 2026-01-21 13:00 |  | 5.5d |  |  | 64h | 1,568,000 |
| 18 | 1.1.1.1.3.1 | 1.1.3.1 Diseño de protocolo MQTT para comunicación | 16h | 2026-01-07 09:00 | 2026-01-08 18:00 | 7 | 16.5d | 0d | Arquitecto de Software | 16h | 448,000 |
| 19 | 1.1.1.1.3.2 | 1.1.3.2 Implementación de cliente MQTT | 24h | 2026-01-14 14:00 | 2026-01-19 13:00 | 16 | 0d |  | Desarrollador Backend | 24h | 672,000 |
| 20 | 1.1.1.1.3.3 | 1.1.3.3 Configuración de topics y subscripciones | 8h | 2026-01-19 14:00 | 2026-01-20 13:00 | 19 | 0d |  | Desarrollador Backend | 8h | 224,000 |
| 21 | 1.1.1.1.3.4 | 1.1.3.4 Testing de comunicación bidireccional | 8h | 2026-01-20 14:00 | 2026-01-21 13:00 | 18, 19, 20 | 9d |  | QA Tester | 8h |  |
| 22 | 1.1.1.1.3.5 | 1.1.3.5 Documentación de protocolo | 8h | 2026-01-09 09:00 | 2026-01-09 18:00 | 18 | 16.5d |  | Arquitecto de Software | 8h | 224,000 |
| 23 | 1.1.1.1.4 | **Paquete de Trabajo 1.1.4: Sistema de logging y auditoría** | 7d | 2026-01-20 14:00 | 2026-01-29 13:00 |  | 0d |  |  | 56h | 1,344,000 |
| 24 | 1.1.1.1.4.1 | 1.1.4.1 Diseño de estructura de logs | 8h | 2026-01-20 14:00 | 2026-01-21 13:00 | 20 | 0d |  | Desarrollador Backend | 8h | 224,000 |
| 25 | 1.1.1.1.4.2 | 1.1.4.2 Implementación de logger centralizado | 16h | 2026-01-21 14:00 | 2026-01-23 13:00 | 24 | 0d |  | Desarrollador Backend | 16h | 448,000 |
| 26 | 1.1.1.1.4.3 | 1.1.4.3 Configuración de niveles de logging (debug, info, error) | 8h | 2026-01-23 14:00 | 2026-01-26 13:00 | 25 | 0d |  | Desarrollador Backend | 8h | 224,000 |
| 27 | 1.1.1.1.4.4 | 1.1.4.4 Integración con sistema de monitoreo | 16h | 2026-01-26 14:00 | 2026-01-28 13:00 | 26 | 0d |  | DevOps Engineer | 16h | 448,000 |
| 28 | 1.1.1.1.4.5 | 1.1.4.5 Testing de trazabilidad de eventos | 8h | 2026-01-28 14:00 | 2026-01-29 13:00 | 24, 25, 26, 27 | 0d |  | QA Tester | 8h |  |

| ID | WBS | Task | Type | Duration | Start | Finish | Predecessors | Total slack | Free slack | Resources | Work | Cost |
| --- | --- | --- | --- | --- | --- | --- | --- | --- | --- | --- | --- | --- |
| 29 | 1.1.1.1.5 | **Paquete de Trabajo 1.1.5: Documentación técnica de middleware** |  | 6d | 2026-01-26 14:00 | 2026-02-03 13:00 |  | 0d |  |  | 44h | 1,240,000 |
| 30 | 1.1.1.1.5.1 | 1.1.5.1 Redacción de manual de arquitectura |  | 16h | 2026-01-29 14:00 | 2026-02-02 13:00 | 28 | 0d |  | Arquitecto de Software | 16h | 448,000 |
| 31 | 1.1.1.1.5.2 | 1.1.5.2 Creación de diagramas de componentes |  | 8h | 2026-02-02 14:00 | 2026-02-03 13:00 | 30 | 0d |  | Arquitecto de Software | 8h | 224,000 |
| 32 | 1.1.1.1.5.3 | 1.1.5.3 Documentación de configuración y despliegue |  | 8h | 2026-01-28 14:00 | 2026-01-29 13:00 | 27 | 2.5d | 0d | DevOps Engineer | 8h | 224,000 |
| 33 | 1.1.1.1.5.4 | 1.1.5.4 Guía de troubleshooting |  | 8h | 2026-01-26 14:00 | 2026-01-27 13:00 | 26 | 4.5d | 2d | Desarrollador Backend | 8h | 224,000 |
| 34 | 1.1.1.1.5.5 | 1.1.5.5 Revisión y aprobación de documentación |  | 4h | 2026-01-29 14:00 | 2026-01-29 18:00 | 32, 33 | 2.5d |  | Jefe de Proyecto | 4h | 120,000 |
| 35 | 1.1.1.1.6 | Termino Entregable 1.1: Middleware de Integración de Datos | milestone | 0h | 2026-02-03 13:00 | 2026-02-03 13:00 | 5, 11, 17, 23, 29 | 0d |  |  |  |  |
| 36 | 1.1.1.2 | **Entregable 1.2: Sistema de Base de Datos** |  | 19.5d | 2026-02-03 14:00 | 2026-03-02 18:00 | 35 | 0d |  |  | 276h | 6,840,000 |
| 37 | 1.1.1.2.1 | **Paquete de Trabajo 1.2.1: Modelo de datos relacional PostgreSQL** |  | 6d | 2026-02-03 14:00 | 2026-02-11 13:00 |  | 0d |  |  | 56h | 1,568,000 |
| 38 | 1.1.1.2.1.1 | 1.2.1.1 Análisis de requerimientos de datos |  | 8h | 2026-02-03 14:00 | 2026-02-04 13:00 |  | 5.5d | 0d | Ingeniero de Datos | 8h | 224,000 |
| 39 | 1.1.1.2.1.2 | 1.2.1.2 Diseño de modelo entidad-relación |  | 16h | 2026-02-04 14:00 | 2026-02-06 13:00 | 38 | 5.5d | 0d | Ingeniero de Datos | 16h | 448,000 |
| 40 | 1.1.1.2.1.3 | 1.2.1.3 Normalización de tablas (3FN) |  | 8h | 2026-02-06 14:00 | 2026-02-09 13:00 | 39 | 5.5d | 0d | Ingeniero de Datos | 8h | 224,000 |
| 41 | 1.1.1.2.1.4 | 1.2.1.4 Definición de relaciones y constraints |  | 8h | 2026-02-09 14:00 | 2026-02-10 13:00 | 40 | 5.5d | 0d | Ingeniero de Datos | 8h | 224,000 |
| 42 | 1.1.1.2.1.5 | 1.2.1.5 Creación de scripts DDL |  | 8h | 2026-02-03 14:00 | 2026-02-04 13:00 | 33 | 0d |  | Desarrollador Backend | 8h | 224,000 |
| 43 | 1.1.1.2.1.6 | 1.2.1.6 Documentación del modelo de datos |  | 8h | 2026-02-10 14:00 | 2026-02-11 13:00 | 41, 42 | 5.5d | 0d | Ingeniero de Datos | 8h | 224,000 |
| 44 | 1.1.1.2.2 | **Paquete de Trabajo 1.2.2: Esquema de series temporales InfluxDB** |  | 8d | 2026-02-11 14:00 | 2026-02-23 13:00 |  | 5.5d |  |  | 64h | 1,568,000 |
| 45 | 1.1.1.2.2.1 | 1.2.2.1 Diseño de measurements y tags |  | 16h | 2026-02-11 14:00 | 2026-02-13 13:00 | 43 | 5.5d | 0d | Ingeniero de Datos | 16h | 448,000 |
| 46 | 1.1.1.2.2.2 | 1.2.2.2 Configuración de retention policies |  | 8h | 2026-02-13 14:00 | 2026-02-16 13:00 | 45 | 5.5d | 0d | Ingeniero de Datos | 8h | 224,000 |
| 47 | 1.1.1.2.2.3 | 1.2.2.3 Optimización de queries temporales |  | 16h | 2026-02-16 14:00 | 2026-02-18 13:00 | 46 | 5.5d | 0d | Ingeniero de Datos | 16h | 448,000 |
| 48 | 1.1.1.2.2.4 | 1.2.2.4 Implementación de continuous queries |  | 8h | 2026-02-18 14:00 | 2026-02-19 13:00 | 47 | 5.5d | 0d | Ingeniero de Datos | 8h | 224,000 |
| 49 | 1.1.1.2.2.5 | 1.2.2.5 Testing de rendimiento con datos simulados |  | 8h | 2026-02-19 14:00 | 2026-02-20 13:00 | 45, 46, 47, 48 | 5.5d | 0d | QA Tester | 8h |  |
| 50 | 1.1.1.2.2.6 | 1.2.2.6 Documentación de esquema temporal |  | 8h | 2026-02-20 14:00 | 2026-02-23 13:00 | 49 | 5.5d |  | Ingeniero de Datos | 8h | 224,000 |
| 51 | 1.1.1.2.3 | **Paquete de Trabajo 1.2.3: Scripts de migración y versionado de BD** |  | 5.5d | 2026-02-04 14:00 | 2026-02-11 18:00 |  | 0d |  |  | 44h | 1,008,000 |
| 52 | 1.1.1.2.3.1 | 1.2.3.1 Configuración de herramienta de migración (Flyway/Liquibase) |  | 8h | 2026-02-04 14:00 | 2026-02-05 13:00 | 42 | 0d |  | Desarrollador Backend | 8h | 224,000 |
| 53 | 1.1.1.2.3.2 | 1.2.3.2 Creación de scripts de migración iniciales |  | 16h | 2026-02-05 14:00 | 2026-02-09 13:00 | 52 | 0d |  | Desarrollador Backend | 16h | 448,000 |
| 54 | 1.1.1.2.3.3 | 1.2.3.3 Implementación de rollback scripts |  | 8h | 2026-02-09 14:00 | 2026-02-10 13:00 | 53 | 0d |  | Desarrollador Backend | 8h | 224,000 |
| 55 | 1.1.1.2.3.4 | 1.2.3.4 Testing de migraciones en ambiente de desarrollo |  | 8h | 2026-02-10 14:00 | 2026-02-11 13:00 | 52, 53, 54 | 0d |  | QA Tester | 8h |  |
| 56 | 1.1.1.2.3.5 | 1.2.3.5 Documentación de proceso de migración |  | 4h | 2026-02-11 14:00 | 2026-02-11 18:00 | 55 | 0d |  | Desarrollador Backend | 4h | 112,000 |

| ID | WBS | Task | Type | Duration | Start | Finish | Predecessors | Total slack | Free slack | Resources | Work | Cost |
| --- | --- | --- | --- | --- | --- | --- | --- | --- | --- | --- | --- | --- |
| 57 | 1.1.1.2.4 | **Paquete de Trabajo 1.2.4: Procedimientos almacenados y triggers** |  | 10.5d | 2026-02-12 09:00 | 2026-02-26 13:00 |  | 0d |  |  | 64h | 1,568,000 |
| 58 | 1.1.1.2.4.1 | 1.2.4.1 Identificación de lógica de negocio en BD |  | 8h | 2026-02-19 14:00 | 2026-02-20 13:00 | 56 | 0d |  | Ingeniero de Datos | 8h | 224,000 |
| 59 | 1.1.1.2.4.2 | 1.2.4.2 Desarrollo de stored procedures |  | 24h | 2026-02-12 09:00 | 2026-02-16 18:00 | 56 | 1.5d | 0d | Desarrollador Backend | 24h | 672,000 |
| 60 | 1.1.1.2.4.3 | 1.2.4.3 Implementación de triggers para auditoría |  | 16h | 2026-02-17 09:00 | 2026-02-18 18:00 | 59 | 1.5d | 0d | Desarrollador Backend | 16h | 448,000 |
| 61 | 1.1.1.2.4.4 | 1.2.4.4 Testing de procedimientos y triggers |  | 8h | 2026-02-20 14:00 | 2026-02-24 13:00 | 58, 60 | 0d |  | QA Tester | 8h |  |
| 62 | 1.1.1.2.4.5 | 1.2.4.5 Optimización de performance |  | 8h | 2026-02-24 14:00 | 2026-02-26 13:00 | 61 | 0d |  | Ingeniero de Datos | 8h | 224,000 |
| 63 | 1.1.1.2.5 | **Paquete de Trabajo 1.2.5: Políticas de retención y archivado de datos** |  | 8d | 2026-02-19 09:00 | 2026-03-02 18:00 |  | 0d |  |  | 48h | 1,128,000 |
| 64 | 1.1.1.2.5.1 | 1.2.5.1 Análisis de normativa DGA para retención |  | 4h | 2026-02-26 14:00 | 2026-02-26 18:00 | 62 | 2d |  | Jefe de Proyecto | 4h | 120,000 |
| 65 | 1.1.1.2.5.2 | 1.2.5.2 Diseño de estrategia de archivado |  | 8h | 2026-02-27 09:00 | 2026-02-27 18:00 | 62 | 0d |  | Ingeniero de Datos | 8h | 224,000 |
| 66 | 1.1.1.2.5.3 | 1.2.5.3 Configuración de políticas de retención 7 años |  | 8h | 2026-03-02 09:00 | 2026-03-02 18:00 | 65 | 0d |  | Ingeniero de Datos | 8h | 224,000 |
| 67 | 1.1.1.2.5.4 | 1.2.5.4 Implementación de procesos de archivado automático |  | 16h | 2026-02-19 09:00 | 2026-02-20 18:00 | 60 | 4.5d | 0d | Desarrollador Backend | 16h | 448,000 |
| 68 | 1.1.1.2.5.5 | 1.2.5.5 Testing de recuperación de datos históricos |  | 8h | 2026-02-23 09:00 | 2026-02-23 18:00 | 67 | 4.5d | 0d | QA Tester | 8h |  |
| 69 | 1.1.1.2.5.6 | 1.2.5.6 Documentación de políticas |  | 4h | 2026-02-24 09:00 | 2026-02-24 13:00 | 68 | 4.5d |  | Ingeniero de Datos | 4h | 112,000 |
| 70 | 1.1.1.2.6 | Termino Entregable 1.2: Sistema de Base de Datos | milestone | 0h | 2026-03-02 18:00 | 2026-03-02 18:00 | 37, 44, 51, 57, 63 | 0d |  |  |  |  |
| 71 | 1.1.1.3 | **Entregable 1.3: Sistema de Comunicación MQTT** |  | 29.5d | 2026-03-03 09:00 | 2026-04-14 13:00 | 70 | 0d |  |  | 280h | 6,720,000 |
| 72 | 1.1.1.3.1 | **Paquete de Trabajo 1.3.1: Configuración de broker MQTT Mosquitto** |  | 5d | 2026-03-03 09:00 | 2026-03-09 18:00 |  | 0d |  |  | 40h | 896,000 |
| 73 | 1.1.1.3.1.1 | 1.3.1.1 Instalación y configuración de Mosquitto |  | 8h | 2026-03-03 09:00 | 2026-03-03 18:00 | 70 | 0d |  | DevOps Engineer | 8h | 224,000 |
| 74 | 1.1.1.3.1.2 | 1.3.1.2 Configuración de autenticación y ACL |  | 8h | 2026-03-04 09:00 | 2026-03-04 18:00 | 73 | 0d |  | DevOps Engineer | 8h | 224,000 |
| 75 | 1.1.1.3.1.3 | 1.3.1.3 Optimización de parámetros del broker |  | 8h | 2026-03-05 09:00 | 2026-03-05 18:00 | 74 | 0d |  | DevOps Engineer | 8h | 224,000 |
| 76 | 1.1.1.3.1.4 | 1.3.1.4 Configuración de logging del broker |  | 4h | 2026-03-06 09:00 | 2026-03-06 13:00 | 75 | 0d |  | DevOps Engineer | 4h | 112,000 |
| 77 | 1.1.1.3.1.5 | 1.3.1.5 Testing de carga y estabilidad |  | 8h | 2026-03-06 14:00 | 2026-03-09 13:00 | 76 | 0d |  | QA Tester | 8h |  |
| 78 | 1.1.1.3.1.6 | 1.3.1.6 Documentación de configuración |  | 4h | 2026-03-09 14:00 | 2026-03-09 18:00 | 77 | 0d |  | DevOps Engineer | 4h | 112,000 |
| 79 | 1.1.1.3.2 | **Paquete de Trabajo 1.3.2: Cliente MQTT con QoS y reconexión automática** |  | 8d | 2026-03-10 09:00 | 2026-03-19 18:00 |  | 0d |  |  | 64h | 1,568,000 |
| 80 | 1.1.1.3.2.1 | 1.3.2.1 Diseño de cliente MQTT con librería Paho |  | 8h | 2026-03-10 09:00 | 2026-03-10 18:00 | 78 | 0d |  | Desarrollador Backend | 8h | 224,000 |
| 81 | 1.1.1.3.2.2 | 1.3.2.2 Implementación de QoS levels (0, 1, 2) |  | 16h | 2026-03-11 09:00 | 2026-03-12 18:00 | 80 | 0d |  | Desarrollador Backend | 16h | 448,000 |
| 82 | 1.1.1.3.2.3 | 1.3.2.3 Desarrollo de lógica de reconexión automática |  | 16h | 2026-03-13 09:00 | 2026-03-16 18:00 | 81 | 0d |  | Desarrollador Backend | 16h | 448,000 |
| 83 | 1.1.1.3.2.4 | 1.3.2.4 Implementación de keepalive y heartbeat |  | 8h | 2026-03-17 09:00 | 2026-03-17 18:00 | 82 | 0d |  | Desarrollador Backend | 8h | 224,000 |
| 84 | 1.1.1.3.2.5 | 1.3.2.5 Testing de reconexión ante fallas de red |  | 8h | 2026-03-18 09:00 | 2026-03-18 18:00 | 83 | 0d |  | QA Tester | 8h |  |
| 85 | 1.1.1.3.2.6 | 1.3.2.6 Documentación de cliente MQTT |  | 8h | 2026-03-19 09:00 | 2026-03-19 18:00 | 84 | 0d |  | Desarrollador Backend | 8h | 224,000 |

| ID | WBS | Task | Type | Duration | Start | Finish | Predecessors | Total slack | Free slack | Resources | Work | Cost |
| --- | --- | --- | --- | --- | --- | --- | --- | --- | --- | --- | --- | --- |
| 86 | 1.1.1.3.3 | **Paquete de Trabajo 1.3.3: Sistema de buffer offline 24 horas** |  | 7d | 2026-03-20 09:00 | 2026-03-30 18:00 |  | 0d |  |  | 64h | 1,568,000 |
| 87 | 1.1.1.3.3.1 | 1.3.3.1 Diseño de estrategia de buffer local |  | 8h | 2026-03-20 09:00 | 2026-03-20 18:00 | 85 | 5d |  | Arquitecto de Software | 8h | 224,000 |
| 88 | 1.1.1.3.3.2 | 1.3.3.2 Implementación de almacenamiento temporal SQLite |  | 16h | 2026-03-20 09:00 | 2026-03-23 18:00 | 85 | 0d |  | Desarrollador Backend | 16h | 448,000 |
| 89 | 1.1.1.3.3.3 | 1.3.3.3 Desarrollo de sincronización automática post-reconexión |  | 24h | 2026-03-24 09:00 | 2026-03-26 18:00 | 88 | 0d |  | Desarrollador Backend | 24h | 672,000 |
| 90 | 1.1.1.3.3.4 | 1.3.3.4 Implementación de políticas de limpieza de buffer |  | 8h | 2026-03-27 09:00 | 2026-03-27 18:00 | 89 | 0d |  | Desarrollador Backend | 8h | 224,000 |
| 91 | 1.1.1.3.3.5 | 1.3.3.5 Testing de escenarios offline/online |  | 8h | 2026-03-30 09:00 | 2026-03-30 18:00 | 87, 90 | 0d |  | QA Tester | 8h |  |
| 92 | 1.1.1.3.4 | **Paquete de Trabajo 1.3.4: Monitoreo de conectividad 4G/LTE** |  | 4d | 2026-03-31 09:00 | 2026-04-06 18:00 |  | 0d |  |  | 64h | 1,568,000 |
| 93 | 1.1.1.3.4.1 | 1.3.4.1 Diseño de sistema de monitoreo de conexiones |  | 8h | 2026-03-31 09:00 | 2026-03-31 18:00 | 91 | 0d |  | Desarrollador Backend | 8h | 224,000 |
| 94 | 1.1.1.3.4.2 | 1.3.4.2 Implementación de health checks periódicos |  | 16h | 2026-04-01 09:00 | 2026-04-02 18:00 | 93 | 0d |  | Desarrollador Backend | 16h | 448,000 |
| 95 | 1.1.1.3.4.3 | 1.3.4.3 Desarrollo de dashboard de estado de estaciones |  | 24h | 2026-03-31 09:00 | 2026-04-02 18:00 | 91 | 0d |  | Desarrollador Frontend | 24h | 672,000 |
| 96 | 1.1.1.3.4.4 | 1.3.4.4 Configuración de alertas por pérdida de conectividad |  | 8h | 2026-03-31 09:00 | 2026-03-31 18:00 | 91 | 2d |  | DevOps Engineer | 8h | 224,000 |
| 97 | 1.1.1.3.4.5 | 1.3.4.5 Testing de monitoreo en tiempo real |  | 8h | 2026-04-06 09:00 | 2026-04-06 18:00 | 94, 95, 96 | 0d |  | QA Tester | 8h |  |
| 98 | 1.1.1.3.5 | **Paquete de Trabajo 1.3.5: Certificados TLS y configuración VPN** |  | 5.5d | 2026-04-07 09:00 | 2026-04-14 13:00 |  | 0d |  |  | 48h | 1,120,000 |
| 99 | 1.1.1.3.5.1 | 1.3.5.1 Generación de certificados SSL/TLS |  | 4h | 2026-04-07 09:00 | 2026-04-07 13:00 | 97 | 0d |  | DevOps Engineer | 4h | 112,000 |
| 100 | 1.1.1.3.5.2 | 1.3.5.2 Configuración de MQTT sobre TLS |  | 8h | 2026-04-07 14:00 | 2026-04-08 13:00 | 99 | 0d |  | DevOps Engineer | 8h | 224,000 |
| 101 | 1.1.1.3.5.3 | 1.3.5.3 Implementación de túnel VPN |  | 16h | 2026-04-08 14:00 | 2026-04-10 13:00 | 100 | 0d |  | DevOps Engineer | 16h | 448,000 |
| 102 | 1.1.1.3.5.4 | 1.3.5.4 Configuración de políticas de seguridad |  | 8h | 2026-04-10 14:00 | 2026-04-13 13:00 | 101 | 0d |  | DevOps Engineer | 8h | 224,000 |
| 103 | 1.1.1.3.5.5 | 1.3.5.5 Testing de comunicaciones cifradas |  | 8h | 2026-04-13 14:00 | 2026-04-14 13:00 | 102 | 0d |  | QA Tester | 8h |  |
| 104 | 1.1.1.3.5.6 | 1.3.5.6 Documentación de seguridad |  | 4h | 2026-04-13 14:00 | 2026-04-13 18:00 | 102 | 0.5d |  | DevOps Engineer | 4h | 112,000 |
| 105 | 1.1.1.3.6 | Termino Entregable 1.3: Sistema de Comunicación MQTT | milestone | 0h | 2026-04-14 13:00 | 2026-04-14 13:00 | 72, 79, 86, 92, 98 | 0d |  |  |  |  |
| 106 | 1.1.1.4 | **Entregable 1.4: Prototipos y Pruebas de Integración** |  | 20.5d | 2026-04-14 14:00 | 2026-05-13 18:00 | 105 | 0d |  |  | 296h | 3,896,000 |
| 107 | 1.1.1.4.1 | **Paquete de Trabajo 1.4.1: Ambiente de pruebas de laboratorio** |  | 3d | 2026-04-14 14:00 | 2026-04-17 13:00 |  | 0d |  |  | 48h | 928,000 |
| 108 | 1.1.1.4.1.1 | 1.4.1.1 Diseño de arquitectura de laboratorio |  | 8h | 2026-04-14 14:00 | 2026-04-15 13:00 | 105 | 1d |  | Arquitecto de Software | 8h | 224,000 |
| 109 | 1.1.1.4.1.2 | 1.4.1.2 Adquisición e instalación de 3 estaciones piloto |  | 16h | 2026-04-14 14:00 | 2026-04-16 13:00 | 105 | 0d |  | Jefe de Proyecto | 16h | 480,000 |
| 110 | 1.1.1.4.1.3 | 1.4.1.3 Configuración de red de laboratorio |  | 8h | 2026-04-14 14:00 | 2026-04-15 13:00 | 105 | 1d |  | DevOps Engineer | 8h | 224,000 |
| 111 | 1.1.1.4.1.4 | 1.4.1.4 Instalación de sensores y microcontroladores |  | 8h | 2026-04-14 14:00 | 2026-04-15 13:00 | 105 | 1d | 0d | Técnico de Campo | 8h |  |
| 112 | 1.1.1.4.1.5 | 1.4.1.5 Validación de ambiente completo |  | 8h | 2026-04-16 14:00 | 2026-04-17 13:00 | 108, 109, 110, 111 | 0d |  | QA Tester | 8h |  |

| ID | WBS | Task | Type | Duration | Start | Finish | Predecessors | Total slack | Free slack | Resources | Work | Cost |
| --- | --- | --- | --- | --- | --- | --- | --- | --- | --- | --- | --- | --- |
| 113 | 1.1.1.4.2 | **Paquete de Trabajo 1.4.2: Scripts de testing automatizado** |  | 6d | 2026-04-17 14:00 | 2026-04-27 13:00 |  | 0d |  |  | 72h | 672,000 |
| 114 | 1.1.1.4.2.1 | 1.4.2.1 Diseño de casos de prueba end-to-end |  | 16h | 2026-04-17 14:00 | 2026-04-21 13:00 | 112 | 0d |  | QA Tester | 16h |  |
| 115 | 1.1.1.4.2.2 | 1.4.2.2 Implementación de tests automatizados con Jest/Mocha |  | 24h | 2026-04-21 14:00 | 2026-04-24 13:00 | 114 | 0d |  | QA Tester | 24h |  |
| 116 | 1.1.1.4.2.3 | 1.4.2.3 Desarrollo de tests de integración |  | 16h | 2026-04-17 14:00 | 2026-04-21 13:00 | 112 | 9d | 0d | Desarrollador Backend | 16h | 448,000 |
| 117 | 1.1.1.4.2.4 | 1.4.2.4 Configuración de CI/CD para testing |  | 8h | 2026-04-17 14:00 | 2026-04-20 13:00 | 112 | 16.5d |  | DevOps Engineer | 8h | 224,000 |
| 118 | 1.1.1.4.2.5 | 1.4.2.5 Ejecución y análisis de resultados |  | 8h | 2026-04-24 14:00 | 2026-04-27 13:00 | 115 | 0d |  | QA Tester | 8h |  |
| 119 | 1.1.1.4.3 | **Paquete de Trabajo 1.4.3: Pruebas de integración hardware-software** |  | 10d | 2026-04-21 14:00 | 2026-05-06 13:00 |  | 1d |  |  | 64h | 448,000 |
| 120 | 1.1.1.4.3.1 | 1.4.3.1 Testing de comunicación con microcontroladores |  | 16h | 2026-04-21 14:00 | 2026-04-23 13:00 | 116 | 9d | 0d | Desarrollador Backend | 16h | 448,000 |
| 121 | 1.1.1.4.3.2 | 1.4.3.2 Validación de lectura de sensores análogos |  | 16h | 2026-04-27 14:00 | 2026-04-29 13:00 | 118 | 0d |  | QA Tester | 16h |  |
| 122 | 1.1.1.4.3.3 | 1.4.3.3 Testing de finales de carrera y relés |  | 8h | 2026-04-29 14:00 | 2026-04-30 13:00 | 121 | 0d |  | QA Tester | 8h |  |
| 123 | 1.1.1.4.3.4 | 1.4.3.4 Pruebas de latencia de comunicación 4G |  | 8h | 2026-04-30 14:00 | 2026-05-04 13:00 | 122 | 0d |  | QA Tester | 8h |  |
| 124 | 1.1.1.4.3.5 | 1.4.3.5 Validación de comandos de control remoto |  | 8h | 2026-05-04 14:00 | 2026-05-05 13:00 | 123 | 0d |  | QA Tester | 8h |  |
| 125 | 1.1.1.4.3.6 | 1.4.3.6 Documentación de resultados de integración |  | 8h | 2026-05-05 14:00 | 2026-05-06 13:00 | 124 | 0d |  | QA Tester | 8h |  |
| 126 | 1.1.1.4.4 | **Paquete de Trabajo 1.4.4: Validación de precisión de datos ±2%** |  | 17d | 2026-04-15 14:00 | 2026-05-11 13:00 |  | 0d |  |  | 72h | 912,000 |
| 127 | 1.1.1.4.4.1 | 1.4.4.1 Calibración de sensores con equipamiento patrón |  | 16h | 2026-04-15 14:00 | 2026-04-17 13:00 | 111 | 11d | 0d | Técnico de Campo | 16h |  |
| 128 | 1.1.1.4.4.2 | 1.4.4.2 Mediciones comparativas con instrumentos certificados |  | 24h | 2026-04-17 14:00 | 2026-04-22 13:00 | 127 | 11d |  | Técnico de Campo | 24h |  |
| 129 | 1.1.1.4.4.3 | 1.4.4.3 Análisis estadístico de precisión |  | 16h | 2026-05-06 14:00 | 2026-05-08 13:00 | 125 | 0d |  | Ingeniero de Datos | 16h | 448,000 |
| 130 | 1.1.1.4.4.4 | 1.4.4.4 Ajustes de algoritmos de conversión |  | 8h | 2026-04-23 14:00 | 2026-04-24 13:00 | 120 | 9d |  | Desarrollador Backend | 8h | 224,000 |
| 131 | 1.1.1.4.4.5 | 1.4.4.5 Certificación de cumplimiento de especificaciones |  | 8h | 2026-05-08 14:00 | 2026-05-11 13:00 | 127, 128, 129, 130 | 0d |  | Jefe de Proyecto | 8h | 240,000 |
| 132 | 1.1.1.4.5 | **Paquete de Trabajo 1.4.5: Informe de validación y certificación** |  | 2.5d | 2026-05-11 14:00 | 2026-05-13 18:00 |  | 0d |  |  | 40h | 936,000 |
| 133 | 1.1.1.4.5.1 | 1.4.5.1 Recopilación de resultados de todas las pruebas |  | 8h | 2026-05-11 14:00 | 2026-05-12 13:00 | 131 | 1d |  | QA Tester | 8h |  |
| 134 | 1.1.1.4.5.2 | 1.4.5.2 Redacción de informe técnico |  | 16h | 2026-05-11 14:00 | 2026-05-13 13:00 | 131 | 0d |  | Jefe de Proyecto | 16h | 480,000 |
| 135 | 1.1.1.4.5.3 | 1.4.5.3 Generación de gráficos y tablas de resultados |  | 8h | 2026-05-11 14:00 | 2026-05-12 13:00 | 131 | 1d |  | Ingeniero de Datos | 8h | 224,000 |
| 136 | 1.1.1.4.5.4 | 1.4.5.4 Revisión y aprobación de informe |  | 4h | 2026-05-11 14:00 | 2026-05-11 18:00 | 131 | 1.5d |  | Arquitecto de Software | 4h | 112,000 |
| 137 | 1.1.1.4.5.5 | 1.4.5.5 Presentación de resultados al cliente |  | 4h | 2026-05-13 14:00 | 2026-05-13 18:00 | 133, 134, 135, 136 | 0d |  | Jefe de Proyecto | 4h | 120,000 |
| 138 | 1.1.1.4.6 | Termino Entregable 1.4: Prototipos y Pruebas de Integración | milestone | 0h | 2026-05-13 18:00 | 2026-05-13 18:00 | 107, 113, 119, 126, 132 | 0d |  |  |  |  |
| 139 | 1.1.2 | FIN OBJETIVO 1.0 | milestone | 0h | 2026-05-13 18:00 | 2026-05-13 18:00 | 70, 105, 138, 35 | 0d |  |  |  |  |

| ID | WBS | Task | Duration | Start | Finish | Predecessors | Total slack | Free slack | Resources | Work | Cost |
| --- | --- | --- | --- | --- | --- | --- | --- | --- | --- | --- | --- |
| 140 | 1.1.3 | **OBJETIVO 2.0: Implementar Plataforma Web de Monitoreo y Control Remoto** | 79.5d | 2026-05-14 09:00 | 2026-09-08 13:00 |  | 0d |  |  | 1260h | 31,264,000 |
| 141 | 1.1.3.1 | **Entregable 2.1: Backend API RESTful** | 28.5d | 2026-05-14 09:00 | 2026-06-24 13:00 |  | 0d |  |  | 300h | 7,728,000 |
| 142 | 1.1.3.1.1 | **Paquete de Trabajo 2.1.1: Arquitectura de servicios Node.js/Express** | 4d | 2026-05-14 09:00 | 2026-05-19 18:00 |  | 0d |  |  | 56h | 1,568,000 |
| 143 | 1.1.3.1.1.1 | 2.1.1.1 Diseño de arquitectura MVC | 16h | 2026-05-14 09:00 | 2026-05-15 18:00 | 139 | 4.5d | 0d | Arquitecto de Software | 16h | 448,000 |
| 144 | 1.1.3.1.1.2 | 2.1.1.2 Configuración de servidor Express | 8h | 2026-05-14 09:00 | 2026-05-14 18:00 | 139 | 0d |  | Desarrollador Backend | 8h | 224,000 |
| 145 | 1.1.3.1.1.3 | 2.1.1.3 Organización de módulos y capas | 16h | 2026-05-15 09:00 | 2026-05-18 18:00 | 144 | 0d |  | Desarrollador Backend | 16h | 448,000 |
| 146 | 1.1.3.1.1.4 | 2.1.1.4 Configuración de middleware | 8h | 2026-05-19 09:00 | 2026-05-19 18:00 | 145 | 0d |  | Desarrollador Backend | 8h | 224,000 |
| 147 | 1.1.3.1.1.5 | 2.1.1.5 Documentación de arquitectura | 8h | 2026-05-18 09:00 | 2026-05-18 18:00 | 143 | 4.5d | 0d | Arquitecto de Software | 8h | 224,000 |
| 148 | 1.1.3.1.2 | **Paquete de Trabajo 2.1.2: Endpoints REST para operaciones CRUD** | 8d | 2026-05-19 09:00 | 2026-05-29 18:00 |  | 1d |  |  | 72h | 1,792,000 |
| 149 | 1.1.3.1.2.1 | 2.1.2.1 Diseño de API REST | 16h | 2026-05-19 09:00 | 2026-05-20 18:00 | 147 | 4.5d | 0d | Arquitecto de Software | 16h | 448,000 |
| 150 | 1.1.3.1.2.2 | 2.1.2.2 Implementación de endpoints de estaciones | 16h | 2026-05-20 09:00 | 2026-05-22 18:00 | 146 | 0d |  | Desarrollador Backend | 16h | 448,000 |
| 151 | 1.1.3.1.2.3 | 2.1.2.3 Implementación de endpoints de usuarios | 16h | 2026-05-25 09:00 | 2026-05-26 18:00 | 150 | 0d |  | Desarrollador Backend | 16h | 448,000 |
| 152 | 1.1.3.1.2.4 | 2.1.2.4 Implementación de endpoints de configuración | 16h | 2026-05-27 09:00 | 2026-05-28 18:00 | 151 | 0d |  | Desarrollador Backend | 16h | 448,000 |
| 153 | 1.1.3.1.2.5 | 2.1.2.5 Testing de APIs | 8h | 2026-05-29 09:00 | 2026-05-29 18:00 | 149, 152 | 64.5d |  | QA Tester | 8h |  |
| 154 | 1.1.3.1.3 | **Paquete de Trabajo 2.1.3: WebSocket para comunicación en tiempo real** | 11d | 2026-05-22 09:00 | 2026-06-05 18:00 |  | 4.5d |  |  | 64h | 1,568,000 |
| 155 | 1.1.3.1.3.1 | 2.1.3.1 Diseño de arquitectura WebSocket | 8h | 2026-05-22 09:00 | 2026-05-22 18:00 | 149 | 4.5d | 0d | Arquitecto de Software | 8h | 224,000 |
| 156 | 1.1.3.1.3.2 | 2.1.3.2 Implementación de servidor Socket.io | 16h | 2026-05-29 09:00 | 2026-06-01 18:00 | 152 | 0d |  | Desarrollador Backend | 16h | 448,000 |
| 157 | 1.1.3.1.3.3 | 2.1.3.3 Desarrollo de eventos en tiempo real | 24h | 2026-06-02 09:00 | 2026-06-04 18:00 | 156 | 0d |  | Desarrollador Backend | 24h | 672,000 |
| 158 | 1.1.3.1.3.4 | 2.1.3.4 Testing de comunicación bidireccional | 8h | 2026-06-05 09:00 | 2026-06-05 18:00 | 155, 157 | 59.5d |  | QA Tester | 8h |  |
| 159 | 1.1.3.1.3.5 | 2.1.3.5 Optimización de rendimiento | 8h | 2026-06-05 09:00 | 2026-06-05 18:00 | 157 | 0d |  | Desarrollador Backend | 8h | 224,000 |
| 160 | 1.1.3.1.4 | **Paquete de Trabajo 2.1.4: Integración con base de datos PostgreSQL/InfluxDB** | 8d | 2026-06-08 09:00 | 2026-06-17 18:00 |  | 0d |  |  | 64h | 1,568,000 |
| 161 | 1.1.3.1.4.1 | 2.1.4.1 Configuración de ORMs (Sequelize/TypeORM) | 8h | 2026-06-08 09:00 | 2026-06-08 18:00 | 159 | 0d |  | Desarrollador Backend | 8h | 224,000 |
| 162 | 1.1.3.1.4.2 | 2.1.4.2 Implementación de modelos de datos | 16h | 2026-06-09 09:00 | 2026-06-10 18:00 | 161 | 0d |  | Desarrollador Backend | 16h | 448,000 |
| 163 | 1.1.3.1.4.3 | 2.1.4.3 Desarrollo de queries optimizados | 24h | 2026-06-11 09:00 | 2026-06-15 18:00 | 162 | 0d |  | Desarrollador Backend | 24h | 672,000 |
| 164 | 1.1.3.1.4.4 | 2.1.4.4 Implementación de connection pooling | 8h | 2026-06-16 09:00 | 2026-06-16 18:00 | 163 | 0d |  | Desarrollador Backend | 8h | 224,000 |
| 165 | 1.1.3.1.4.5 | 2.1.4.5 Testing de rendimiento de queries | 8h | 2026-06-17 09:00 | 2026-06-17 18:00 | 164 | 51.5d |  | QA Tester | 8h |  |

| ID | WBS | Task | Type | Duration | Start | Finish | Predecessors | Total slack | Free slack | Resources | Work | Cost |
| --- | --- | --- | --- | --- | --- | --- | --- | --- | --- | --- | --- | --- |
| 166 | 1.1.3.1.5 | **Paquete de Trabajo 2.1.5: Documentación de API con Swagger** |  | 5.5d | 2026-06-17 09:00 | 2026-06-24 13:00 |  | 0d |  |  | 44h | 1,232,000 |
| 167 | 1.1.3.1.5.1 | 2.1.5.1 Configuración de Swagger/OpenAPI |  | 8h | 2026-06-17 09:00 | 2026-06-17 18:00 | 164 | 0d |  | Desarrollador Backend | 8h | 224,000 |
| 168 | 1.1.3.1.5.2 | 2.1.5.2 Documentación de endpoints |  | 16h | 2026-06-18 09:00 | 2026-06-19 18:00 | 167 | 0d |  | Desarrollador Backend | 16h | 448,000 |
| 169 | 1.1.3.1.5.3 | 2.1.5.3 Creación de ejemplos de uso |  | 8h | 2026-06-22 09:00 | 2026-06-22 18:00 | 168 | 0d |  | Desarrollador Backend | 8h | 224,000 |
| 170 | 1.1.3.1.5.4 | 2.1.5.4 Documentación de modelos de datos |  | 8h | 2026-06-23 09:00 | 2026-06-23 18:00 | 169 | 0d |  | Desarrollador Backend | 8h | 224,000 |
| 171 | 1.1.3.1.5.5 | 2.1.5.5 Publicación de documentación |  | 4h | 2026-06-24 09:00 | 2026-06-24 13:00 | 170 | 0d |  | Desarrollador Backend | 4h | 112,000 |
| 172 | 1.1.3.1.6 | Termino Entregable 2.1: Backend API RESTful | milestone | 0h | 2026-06-24 13:00 | 2026-06-24 13:00 | 142, 148, 154, 160, 166 | 47d |  |  |  |  |
| 173 | 1.1.3.2 | **Entregable 2.2: Frontend Web Responsivo** |  | 39d | 2026-05-14 09:00 | 2026-07-09 18:00 |  | 4.5d |  |  | 352h | 8,736,000 |
| 174 | 1.1.3.2.1 | **Paquete de Trabajo 2.2.1: Componentes React con TypeScript** |  | 9d | 2026-05-14 09:00 | 2026-05-27 18:00 |  | 4.5d |  |  | 80h | 2,016,000 |
| 175 | 1.1.3.2.1.1 | 2.2.1.1 Configuración de proyecto React + TypeScript |  | 8h | 2026-05-14 09:00 | 2026-05-14 18:00 | 139 | 5.5d | 0d | Desarrollador Frontend | 8h | 224,000 |
| 176 | 1.1.3.2.1.2 | 2.2.1.2 Diseño de arquitectura de componentes |  | 16h | 2026-05-25 09:00 | 2026-05-26 18:00 | 155 | 4.5d | 0d | Arquitecto de Software | 16h | 448,000 |
| 177 | 1.1.3.2.1.3 | 2.2.1.3 Desarrollo de componentes reutilizables |  | 32h | 2026-05-15 09:00 | 2026-05-20 18:00 | 175 | 5.5d | 0d | Desarrollador Frontend | 32h | 896,000 |
| 178 | 1.1.3.2.1.4 | 2.2.1.4 Implementación de tipos TypeScript |  | 16h | 2026-05-22 09:00 | 2026-05-25 18:00 | 177 | 5.5d | 1d | Desarrollador Frontend | 16h | 448,000 |
| 179 | 1.1.3.2.1.5 | 2.2.1.5 Testing de componentes con Jest |  | 8h | 2026-05-27 09:00 | 2026-05-27 18:00 | 176, 178 | 4.5d | 0d | QA Tester | 8h |  |
| 180 | 1.1.3.2.2 | **Paquete de Trabajo 2.2.2: Dashboard de monitoreo en tiempo real** |  | 17d | 2026-05-14 09:00 | 2026-06-08 18:00 |  | 4.5d |  |  | 80h | 2,016,000 |
| 181 | 1.1.3.2.2.1 | 2.2.2.1 Diseño UX/UI del dashboard |  | 16h | 2026-05-14 09:00 | 2026-05-15 18:00 | 139 | 18.5d | 14d | Diseñador UI/UX | 16h | 448,000 |
| 182 | 1.1.3.2.2.2 | 2.2.2.2 Implementación de vista general de estaciones |  | 24h | 2026-05-28 09:00 | 2026-06-01 18:00 | 179 | 4.5d | 0d | Desarrollador Frontend | 24h | 672,000 |
| 183 | 1.1.3.2.2.3 | 2.2.2.3 Integración con WebSocket para datos en vivo |  | 16h | 2026-06-02 09:00 | 2026-06-03 18:00 | 182 | 4.5d | 0d | Desarrollador Frontend | 16h | 448,000 |
| 184 | 1.1.3.2.2.4 | 2.2.2.4 Desarrollo de indicadores y widgets |  | 16h | 2026-06-04 09:00 | 2026-06-05 18:00 | 183 | 4.5d | 0d | Desarrollador Frontend | 16h | 448,000 |
| 185 | 1.1.3.2.2.5 | 2.2.2.5 Testing de actualización en tiempo real |  | 8h | 2026-06-08 09:00 | 2026-06-08 18:00 | 181, 184 | 4.5d | 0d | QA Tester | 8h |  |
| 186 | 1.1.3.2.3 | **Paquete de Trabajo 2.2.3: Panel de control remoto de compuertas** |  | 8d | 2026-06-09 09:00 | 2026-06-18 18:00 |  | 4.5d |  |  | 72h | 1,792,000 |
| 187 | 1.1.3.2.3.1 | 2.2.3.1 Diseño de interfaz de control |  | 16h | 2026-06-09 09:00 | 2026-06-10 18:00 | 185 | 8.5d | 4d | Diseñador UI/UX | 16h | 448,000 |
| 188 | 1.1.3.2.3.2 | 2.2.3.2 Implementación de comandos de apertura/cierre |  | 24h | 2026-06-09 09:00 | 2026-06-11 18:00 | 185 | 4.5d | 0d | Desarrollador Frontend | 24h | 672,000 |
| 189 | 1.1.3.2.3.3 | 2.2.3.3 Desarrollo de confirmación de comandos |  | 16h | 2026-06-12 09:00 | 2026-06-15 18:00 | 188 | 4.5d | 0d | Desarrollador Frontend | 16h | 448,000 |
| 190 | 1.1.3.2.3.4 | 2.2.3.4 Implementación de retroalimentación de posición |  | 8h | 2026-06-16 09:00 | 2026-06-16 18:00 | 189 | 4.5d | 0d | Desarrollador Frontend | 8h | 224,000 |
| 191 | 1.1.3.2.3.5 | 2.2.3.5 Testing de operaciones remotas |  | 8h | 2026-06-18 09:00 | 2026-06-18 18:00 | 187, 190 | 4.5d | 0d | QA Tester | 8h |  |

| ID | WBS | Task | Type | Duration | Start | Finish | Predecessors | Total slack | Free slack | Resources | Work | Cost |
| --- | --- | --- | --- | --- | --- | --- | --- | --- | --- | --- | --- | --- |
| 192 | 1.1.3.2.4 | **Paquete de Trabajo 2.2.4: Diseño responsivo con Material-UI** |  | 6.5d | 2026-06-19 09:00 | 2026-06-30 13:00 |  | 4.5d |  |  | 60h | 1,456,000 |
| 193 | 1.1.3.2.4.1 | 2.2.4.1 Configuración de Material-UI |  | 4h | 2026-06-19 09:00 | 2026-06-19 13:00 | 191 | 4.5d | 0d | Desarrollador Frontend | 4h | 112,000 |
| 194 | 1.1.3.2.4.2 | 2.2.4.2 Implementación de tema personalizado |  | 8h | 2026-06-19 09:00 | 2026-06-19 18:00 | 191 | 9d | 4.5d | Diseñador UI/UX | 8h | 224,000 |
| 195 | 1.1.3.2.4.3 | 2.2.4.3 Adaptación para dispositivos móviles |  | 24h | 2026-06-19 14:00 | 2026-06-24 13:00 | 193 | 4.5d | 0d | Desarrollador Frontend | 24h | 672,000 |
| 196 | 1.1.3.2.4.4 | 2.2.4.4 Adaptación para tablets |  | 16h | 2026-06-24 14:00 | 2026-06-26 13:00 | 195 | 4.5d | 0d | Desarrollador Frontend | 16h | 448,000 |
| 197 | 1.1.3.2.4.5 | 2.2.4.5 Testing en múltiples dispositivos |  | 8h | 2026-06-26 14:00 | 2026-06-30 13:00 | 194, 196 | 4.5d | 0d | QA Tester | 8h |  |
| 198 | 1.1.3.2.5 | **Paquete de Trabajo 2.2.5: Gráficos interactivos con Chart.js** |  | 7.5d | 2026-06-30 14:00 | 2026-07-09 18:00 |  | 4.5d | 0d |  | 60h | 1,456,000 |
| 199 | 1.1.3.2.5.1 | 2.2.5.1 Configuración de Chart.js |  | 4h | 2026-06-30 14:00 | 2026-06-30 18:00 | 197 | 4.5d | 0d | Desarrollador Frontend | 4h | 112,000 |
| 200 | 1.1.3.2.5.2 | 2.2.5.2 Implementación de gráficos de series temporales |  | 24h | 2026-07-01 09:00 | 2026-07-03 18:00 | 199 | 4.5d | 0d | Desarrollador Frontend | 24h | 672,000 |
| 201 | 1.1.3.2.5.3 | 2.2.5.3 Desarrollo de gráficos de tendencias |  | 16h | 2026-07-06 09:00 | 2026-07-07 18:00 | 200 | 4.5d | 0d | Desarrollador Frontend | 16h | 448,000 |
| 202 | 1.1.3.2.5.4 | 2.2.5.4 Implementación de interactividad (zoom, tooltips) |  | 8h | 2026-07-08 09:00 | 2026-07-08 18:00 | 201 | 4.5d | 0d | Desarrollador Frontend | 8h | 224,000 |
| 203 | 1.1.3.2.5.5 | 2.2.5.5 Testing de visualizaciones |  | 8h | 2026-07-09 09:00 | 2026-07-09 18:00 | 202 | 4.5d |  | QA Tester | 8h |  |
| 204 | 1.1.3.2.6 | Termino Entregable 2.2: Frontend Web Responsivo | milestone | 0h | 2026-07-09 18:00 | 2026-07-09 18:00 | 174, 180, 186, 192, 198 | 4.5d | 0d |  |  |  |
| 205 | 1.1.3.3 | **Entregable 2.3: Sistema de Gestión de Usuarios** |  | 25d | 2026-06-24 14:00 | 2026-07-31 13:00 |  | 0d |  |  | 272h | 6,496,000 |
| 206 | 1.1.3.3.1 | **Paquete de Trabajo 2.3.1: Módulo de autenticación JWT** |  | 11.5d | 2026-06-24 14:00 | 2026-07-10 18:00 |  | 0d |  |  | 56h | 1,344,000 |
| 207 | 1.1.3.3.1.1 | 2.3.1.1 Diseño de flujo de autenticación |  | 8h | 2026-07-10 09:00 | 2026-07-10 18:00 | 204 | 14.5d | 0d | Arquitecto de Software | 8h | 224,000 |
| 208 | 1.1.3.3.1.2 | 2.3.1.2 Implementación de generación de JWT |  | 16h | 2026-06-24 14:00 | 2026-06-26 13:00 | 171 | 0d |  | Desarrollador Backend | 16h | 448,000 |
| 209 | 1.1.3.3.1.3 | 2.3.1.3 Desarrollo de middleware de validación |  | 16h | 2026-06-26 14:00 | 2026-07-01 13:00 | 208 | 0d |  | Desarrollador Backend | 16h | 448,000 |
| 210 | 1.1.3.3.1.4 | 2.3.1.4 Implementación de refresh tokens |  | 8h | 2026-07-01 14:00 | 2026-07-02 13:00 | 209 | 0d |  | Desarrollador Backend | 8h | 224,000 |
| 211 | 1.1.3.3.1.5 | 2.3.1.5 Testing de seguridad |  | 8h | 2026-07-02 14:00 | 2026-07-03 13:00 | 210 | 0d |  | QA Tester | 8h |  |
| 212 | 1.1.3.3.2 | **Paquete de Trabajo 2.3.2: Control de acceso basado en roles (RBAC)** |  | 7.5d | 2026-07-03 14:00 | 2026-07-14 18:00 |  | 0d |  |  | 64h | 1,568,000 |
| 213 | 1.1.3.3.2.1 | 2.3.2.1 Diseño de modelo de roles y permisos |  | 16h | 2026-07-13 09:00 | 2026-07-14 18:00 | 207 | 14.5d |  | Arquitecto de Software | 16h | 448,000 |
| 214 | 1.1.3.3.2.2 | 2.3.2.2 Implementación de 3 niveles de roles |  | 16h | 2026-07-03 14:00 | 2026-07-07 13:00 | 211 | 0d |  | Desarrollador Backend | 16h | 448,000 |
| 215 | 1.1.3.3.2.3 | 2.3.2.3 Desarrollo de middleware de autorización |  | 16h | 2026-07-07 14:00 | 2026-07-09 13:00 | 214 | 0d |  | Desarrollador Backend | 16h | 448,000 |
| 216 | 1.1.3.3.2.4 | 2.3.2.4 Implementación en frontend |  | 8h | 2026-07-09 14:00 | 2026-07-10 13:00 | 215 | 0d |  | Desarrollador Frontend | 8h | 224,000 |
| 217 | 1.1.3.3.2.5 | 2.3.2.5 Testing de permisos |  | 8h | 2026-07-10 14:00 | 2026-07-13 13:00 | 216 | 0d |  | QA Tester | 8h |  |

| ID | WBS | Task | Type | Duration | Start | Finish | Predecessors | Total slack | Free slack | Resources | Work | Cost |
| --- | --- | --- | --- | --- | --- | --- | --- | --- | --- | --- | --- | --- |
| 218 | 1.1.3.3.3 | **Paquete de Trabajo 2.3.3: Gestión de perfiles de usuario** |  | 6.5d | 2026-07-10 09:00 | 2026-07-21 13:00 |  | 0d |  |  | 64h | 1,568,000 |
| 219 | 1.1.3.3.3.1 | 2.3.3.1 Diseño de interfaz de gestión |  | 8h | 2026-07-10 09:00 | 2026-07-10 18:00 | 204 | 4.5d |  | Diseñador UI/UX | 8h | 224,000 |
| 220 | 1.1.3.3.3.2 | 2.3.3.2 Implementación de CRUD de usuarios |  | 24h | 2026-07-13 14:00 | 2026-07-17 13:00 | 217 | 0d |  | Desarrollador Backend | 24h | 672,000 |
| 221 | 1.1.3.3.3.3 | 2.3.3.3 Desarrollo de asignación de roles |  | 8h | 2026-07-17 14:00 | 2026-07-20 13:00 | 220 | 0d |  | Desarrollador Backend | 8h | 224,000 |
| 222 | 1.1.3.3.3.4 | 2.3.3.4 Implementación de interfaz frontend |  | 16h | 2026-07-13 14:00 | 2026-07-15 13:00 | 217 | 2d |  | Desarrollador Frontend | 16h | 448,000 |
| 223 | 1.1.3.3.3.5 | 2.3.3.5 Testing de operaciones |  | 8h | 2026-07-20 14:00 | 2026-07-21 13:00 | 219, 221, 222 | 0d |  | QA Tester | 8h |  |
| 224 | 1.1.3.3.4 | **Paquete de Trabajo 2.3.4: Sistema de auditoría de acciones** |  | 5d | 2026-07-21 14:00 | 2026-07-28 13:00 |  | 0d |  |  | 48h | 1,120,000 |
| 225 | 1.1.3.3.4.1 | 2.3.4.1 Diseño de modelo de auditoría |  | 8h | 2026-07-21 14:00 | 2026-07-22 13:00 | 223 | 10d |  | Ingeniero de Datos | 8h | 224,000 |
| 226 | 1.1.3.3.4.2 | 2.3.4.2 Implementación de logging de acciones |  | 16h | 2026-07-21 14:00 | 2026-07-23 13:00 | 223 | 0d |  | Desarrollador Backend | 16h | 448,000 |
| 227 | 1.1.3.3.4.3 | 2.3.4.3 Desarrollo de registro con timestamps |  | 8h | 2026-07-23 14:00 | 2026-07-24 13:00 | 226 | 0d |  | Desarrollador Backend | 8h | 224,000 |
| 228 | 1.1.3.3.4.4 | 2.3.4.4 Implementación de consulta de logs |  | 8h | 2026-07-24 14:00 | 2026-07-27 13:00 | 227 | 0d |  | Desarrollador Backend | 8h | 224,000 |
| 229 | 1.1.3.3.4.5 | 2.3.4.5 Testing de trazabilidad |  | 8h | 2026-07-27 14:00 | 2026-07-28 13:00 | 228 | 0d |  | QA Tester | 8h |  |
| 230 | 1.1.3.3.5 | **Paquete de Trabajo 2.3.5: Recuperación de contraseñas** |  | 3d | 2026-07-28 14:00 | 2026-07-31 13:00 |  | 0d |  |  | 40h | 896,000 |
| 231 | 1.1.3.3.5.1 | 2.3.5.1 Diseño de flujo de recuperación |  | 8h | 2026-07-28 14:00 | 2026-07-29 13:00 | 229 | 4d | 1d | Arquitecto de Software | 8h | 224,000 |
| 232 | 1.1.3.3.5.2 | 2.3.5.2 Implementación de generación de tokens |  | 8h | 2026-07-28 14:00 | 2026-07-29 13:00 | 229 | 0d |  | Desarrollador Backend | 8h | 224,000 |
| 233 | 1.1.3.3.5.3 | 2.3.5.3 Desarrollo de envío de emails |  | 8h | 2026-07-29 14:00 | 2026-07-30 13:00 | 232 | 0d |  | Desarrollador Backend | 8h | 224,000 |
| 234 | 1.1.3.3.5.4 | 2.3.5.4 Implementación de interfaz de reset |  | 8h | 2026-07-28 14:00 | 2026-07-29 13:00 | 229 | 4d | 1d | Desarrollador Frontend | 8h | 224,000 |
| 235 | 1.1.3.3.5.5 | 2.3.5.5 Testing de seguridad del proceso |  | 8h | 2026-07-30 14:00 | 2026-07-31 13:00 | 231, 233, 234 | 3d |  | QA Tester | 8h |  |
| 236 | 1.1.3.3.6 | Termino Entregable 2.3: Sistema de Gestión de Usuarios | milestone | 0h | 2026-07-31 13:00 | 2026-07-31 13:00 | 206, 212, 218, 224, 230 | 3d | 0d |  |  |  |
| 237 | 1.1.3.4 | **Entregable 2.4: Módulo de Reportes y Analíticas** |  | 27d | 2026-07-30 14:00 | 2026-09-08 13:00 |  | 0d |  |  | 336h | 8,304,000 |
| 238 | 1.1.3.4.1 | **Paquete de Trabajo 2.4.1: Generador de reportes PDF/Excel** |  | 7d | 2026-07-30 14:00 | 2026-08-10 13:00 |  | 0d |  |  | 72h | 1,792,000 |
| 239 | 1.1.3.4.1.1 | 2.4.1.1 Diseño de plantillas de reportes |  | 16h | 2026-07-31 14:00 | 2026-08-04 13:00 | 236 | 3d |  | Diseñador UI/UX | 16h | 448,000 |
| 240 | 1.1.3.4.1.2 | 2.4.1.2 Implementación de generación PDF |  | 24h | 2026-07-30 14:00 | 2026-08-04 13:00 | 233 | 0d |  | Desarrollador Backend | 24h | 672,000 |
| 241 | 1.1.3.4.1.3 | 2.4.1.3 Implementación de exportación Excel |  | 16h | 2026-08-04 14:00 | 2026-08-06 13:00 | 240 | 0d |  | Desarrollador Backend | 16h | 448,000 |
| 242 | 1.1.3.4.1.4 | 2.4.1.4 Desarrollo de personalización de reportes |  | 8h | 2026-08-06 14:00 | 2026-08-07 13:00 | 241 | 0d |  | Desarrollador Backend | 8h | 224,000 |
| 243 | 1.1.3.4.1.5 | 2.4.1.5 Testing de exportación |  | 8h | 2026-08-07 14:00 | 2026-08-10 13:00 | 239, 242 | 0d |  | QA Tester | 8h |  |

| ID | WBS | Task | Type | Duration | Start | Finish | Predecessors | Total slack | Free slack | Resources | Work | Cost |
| --- | --- | --- | --- | --- | --- | --- | --- | --- | --- | --- | --- | --- |
| 244 | 1.1.3.4.2 | **Paquete de Trabajo 2.4.2: Consultas personalizadas de datos** |  | 5d | 2026-08-10 14:00 | 2026-08-17 13:00 |  | 0d |  |  | 72h | 1,792,000 |
| 245 | 1.1.3.4.2.1 | 2.4.2.1 Diseño de query builder |  | 16h | 2026-08-10 14:00 | 2026-08-12 13:00 | 243 | 2d |  | Arquitecto de Software | 16h | 448,000 |
| 246 | 1.1.3.4.2.2 | 2.4.2.2 Implementación de constructor de consultas |  | 24h | 2026-08-10 14:00 | 2026-08-13 13:00 | 243 | 0d |  | Desarrollador Backend | 24h | 672,000 |
| 247 | 1.1.3.4.2.3 | 2.4.2.3 Desarrollo de filtros dinámicos |  | 16h | 2026-08-10 14:00 | 2026-08-12 13:00 | 243 | 2d |  | Desarrollador Frontend | 16h | 448,000 |
| 248 | 1.1.3.4.2.4 | 2.4.2.4 Implementación de guardado de consultas |  | 8h | 2026-08-13 14:00 | 2026-08-14 13:00 | 246 | 0d |  | Desarrollador Backend | 8h | 224,000 |
| 249 | 1.1.3.4.2.5 | 2.4.2.5 Testing de queries complejas |  | 8h | 2026-08-14 14:00 | 2026-08-17 13:00 | 245, 247, 248 | 0d |  | QA Tester | 8h |  |
| 250 | 1.1.3.4.3 | **Paquete de Trabajo 2.4.3: Análisis estadístico de caudales** |  | 5d | 2026-08-17 14:00 | 2026-08-25 13:00 |  | 0d |  |  | 56h | 1,344,000 |
| 251 | 1.1.3.4.3.1 | 2.4.3.1 Diseño de métricas estadísticas |  | 16h | 2026-08-17 14:00 | 2026-08-20 13:00 | 249 | 2d |  | Ingeniero de Datos | 16h | 448,000 |
| 252 | 1.1.3.4.3.2 | 2.4.3.2 Implementación de cálculo de promedios |  | 8h | 2026-08-17 14:00 | 2026-08-19 13:00 | 249 | 0d |  | Desarrollador Backend | 8h | 224,000 |
| 253 | 1.1.3.4.3.3 | 2.4.3.3 Desarrollo de análisis de máximos/mínimos |  | 8h | 2026-08-19 14:00 | 2026-08-20 13:00 | 252 | 0d |  | Desarrollador Backend | 8h | 224,000 |
| 254 | 1.1.3.4.3.4 | 2.4.3.4 Implementación de desviaciones y tendencias |  | 16h | 2026-08-20 14:00 | 2026-08-24 13:00 | 253 | 0d |  | Desarrollador Backend | 16h | 448,000 |
| 255 | 1.1.3.4.3.5 | 2.4.3.5 Testing de precisión de cálculos |  | 8h | 2026-08-24 14:00 | 2026-08-25 13:00 | 254, 251 | 0d |  | QA Tester | 8h |  |
| 256 | 1.1.3.4.4 | **Paquete de Trabajo 2.4.4: Sistema de alertas configurables** |  | 6d | 2026-08-25 14:00 | 2026-09-02 13:00 |  | 0d |  |  | 64h | 1,568,000 |
| 257 | 1.1.3.4.4.1 | 2.4.4.1 Diseño de sistema de alertas |  | 16h | 2026-08-25 14:00 | 2026-08-27 13:00 | 255 | 4d |  | Arquitecto de Software | 16h | 448,000 |
| 258 | 1.1.3.4.4.2 | 2.4.4.2 Implementación de configuración de umbrales |  | 16h | 2026-08-25 14:00 | 2026-08-27 13:00 | 255 | 0d |  | Desarrollador Backend | 16h | 448,000 |
| 259 | 1.1.3.4.4.3 | 2.4.4.3 Desarrollo de notificaciones push |  | 16h | 2026-08-27 14:00 | 2026-08-31 13:00 | 258 | 0d |  | Desarrollador Backend | 16h | 448,000 |
| 260 | 1.1.3.4.4.4 | 2.4.4.4 Implementación de notificaciones email |  | 8h | 2026-08-31 14:00 | 2026-09-01 13:00 | 259 | 0d |  | Desarrollador Backend | 8h | 224,000 |
| 261 | 1.1.3.4.4.5 | 2.4.4.5 Testing de alertas en tiempo real |  | 8h | 2026-09-01 14:00 | 2026-09-02 13:00 | 260 | 0d |  | QA Tester | 8h |  |
| 262 | 1.1.3.4.5 | **Paquete de Trabajo 2.4.5: Dashboard ejecutivo con KPIs** |  | 4d | 2026-09-02 14:00 | 2026-09-08 13:00 |  | 131d |  |  | 72h | 1,808,000 |
| 263 | 1.1.3.4.5.1 | 2.4.5.1 Diseño de dashboard ejecutivo |  | 16h | 2026-09-02 14:00 | 2026-09-04 13:00 | 261 | 132d | 1d | Diseñador UI/UX | 16h | 448,000 |
| 264 | 1.1.3.4.5.2 | 2.4.5.2 Definición de indicadores clave |  | 8h | 2026-09-02 14:00 | 2026-09-03 13:00 | 261 | 133d | 2d | Jefe de Proyecto | 8h | 240,000 |
| 265 | 1.1.3.4.5.3 | 2.4.5.3 Implementación de KPIs |  | 24h | 2026-09-02 14:00 | 2026-09-07 13:00 | 261 | 131d | 0d | Desarrollador Backend | 24h | 672,000 |
| 266 | 1.1.3.4.5.4 | 2.4.5.4 Desarrollo de visualización ejecutiva |  | 16h | 2026-09-02 14:00 | 2026-09-04 13:00 | 261 | 132d | 1d | Desarrollador Frontend | 16h | 448,000 |
| 267 | 1.1.3.4.5.5 | 2.4.5.5 Testing de métricas |  | 8h | 2026-09-07 14:00 | 2026-09-08 13:00 | 263, 264, 265, 266 | 131d |  | QA Tester | 8h |  |
| 268 | 1.1.3.4.6 | Termino Entregable 2.4: Módulo de Reportes y Analíticas | milestone | 0h | 2026-09-02 13:00 | 2026-09-02 13:00 | 238, 244, 250, 256 | 0d |  |  |  |  |
| 269 | 1.1.4 | FIN OBJETIVO 2.0 | milestone | 0h | 2026-09-02 13:00 | 2026-09-02 13:00 | 172, 204, 236, 268 | 0d |  |  |  |  |

| ID | WBS | Task | Duration | Start | Finish | Predecessors | Total slack | Free slack | Resources | Work | Cost |
| --- | --- | --- | --- | --- | --- | --- | --- | --- | --- | --- | --- |
| 270 | 1.1.5 | **OBJETIVO 3.0: Garantizar Seguridad Integral del Sistema** | 61.5d | 2026-09-02 14:00 | 2026-11-27 18:00 |  | 0d |  |  | 840h | 20,672,000 |
| 271 | 1.1.5.1 | **Entregable 3.1: Infraestructura de Seguridad de Red** | 16d | 2026-09-02 14:00 | 2026-09-24 13:00 |  | 0d |  |  | 224h | 5,264,000 |
| 272 | 1.1.5.1.1 | **Paquete de Trabajo 3.1.1: Configuración de firewall de aplicación (WAF)** | 5d | 2026-09-02 14:00 | 2026-09-09 13:00 |  | 0d |  |  | 56h | 1,344,000 |
| 273 | 1.1.5.1.1.1 | 3.1.1.1 Análisis de vulnerabilidades OWASP Top 10 | 8h | 2026-09-02 14:00 | 2026-09-03 13:00 | 269 | 9d | 0d | Especialista Seguridad | 8h | 224,000 |
| 274 | 1.1.5.1.1.2 | 3.1.1.2 Instalación y configuración de WAF | 16h | 2026-09-02 14:00 | 2026-09-04 13:00 | 269 | 0d |  | DevOps Engineer | 16h | 448,000 |
| 275 | 1.1.5.1.1.3 | 3.1.1.3 Implementación de reglas de protección | 16h | 2026-09-03 14:00 | 2026-09-07 13:00 | 273 | 9d | 0d | Especialista Seguridad | 16h | 448,000 |
| 276 | 1.1.5.1.1.4 | 3.1.1.4 Configuración de filtros SQL injection y XSS | 8h | 2026-09-07 14:00 | 2026-09-08 13:00 | 275 | 9d | 0d | Especialista Seguridad | 8h | 224,000 |
| 277 | 1.1.5.1.1.5 | 3.1.1.5 Testing de efectividad del WAF | 8h | 2026-09-08 14:00 | 2026-09-09 13:00 | 274, 276 | 11d |  | QA Tester | 8h |  |
| 278 | 1.1.5.1.2 | **Paquete de Trabajo 3.1.2: Certificados SSL/TLS 1.3** | 3.5d | 2026-09-04 14:00 | 2026-09-09 18:00 |  | 0d |  |  | 28h | 672,000 |
| 279 | 1.1.5.1.2.1 | 3.1.2.1 Adquisición de certificados SSL | 4h | 2026-09-04 14:00 | 2026-09-04 18:00 | 274 | 0d |  | DevOps Engineer | 4h | 112,000 |
| 280 | 1.1.5.1.2.2 | 3.1.2.2 Instalación de certificados en servidor | 8h | 2026-09-07 09:00 | 2026-09-07 18:00 | 279 | 0d |  | DevOps Engineer | 8h | 224,000 |
| 281 | 1.1.5.1.2.3 | 3.1.2.3 Configuración de TLS 1.3 | 8h | 2026-09-08 09:00 | 2026-09-08 18:00 | 280 | 0d |  | DevOps Engineer | 8h | 224,000 |
| 282 | 1.1.5.1.2.4 | 3.1.2.4 Implementación de HTTPS forzado | 4h | 2026-09-09 09:00 | 2026-09-09 13:00 | 281 | 0d |  | DevOps Engineer | 4h | 112,000 |
| 283 | 1.1.5.1.2.5 | 3.1.2.5 Testing de cifrado | 4h | 2026-09-09 14:00 | 2026-09-09 18:00 | 282 | 0d |  | QA Tester | 4h |  |
| 284 | 1.1.5.1.3 | **Paquete de Trabajo 3.1.3: Configuración de VPN para acceso remoto** | 10d | 2026-09-02 14:00 | 2026-09-16 13:00 |  | 0d |  |  | 44h | 1,008,000 |
| 285 | 1.1.5.1.3.1 | 3.1.3.1 Diseño de arquitectura VPN | 8h | 2026-09-02 14:00 | 2026-09-03 13:00 | 269 | 8d | 0d | Arquitecto de Software | 8h | 224,000 |
| 286 | 1.1.5.1.3.2 | 3.1.3.2 Instalación de servidor VPN (OpenVPN) | 8h | 2026-09-10 09:00 | 2026-09-10 18:00 | 283 | 0d |  | DevOps Engineer | 8h | 224,000 |
| 287 | 1.1.5.1.3.3 | 3.1.3.3 Configuración de túneles seguros | 16h | 2026-09-11 09:00 | 2026-09-14 18:00 | 286 | 0d |  | DevOps Engineer | 16h | 448,000 |
| 288 | 1.1.5.1.3.4 | 3.1.3.4 Creación de credenciales de acceso | 4h | 2026-09-15 09:00 | 2026-09-15 13:00 | 287 | 0d |  | DevOps Engineer | 4h | 112,000 |
| 289 | 1.1.5.1.3.5 | 3.1.3.5 Testing de conexiones VPN | 8h | 2026-09-15 14:00 | 2026-09-16 13:00 | 285, 288 | 0d |  | QA Tester | 8h |  |
| 290 | 1.1.5.1.4 | **Paquete de Trabajo 3.1.4: Segmentación de red por VLANs** | 13d | 2026-09-03 14:00 | 2026-09-22 13:00 |  | 2d |  |  | 48h | 1,120,000 |
| 291 | 1.1.5.1.4.1 | 3.1.4.1 Diseño de topología de VLANs | 16h | 2026-09-03 14:00 | 2026-09-07 13:00 | 285 | 12d | 10d | Arquitecto de Software | 16h | 448,000 |
| 292 | 1.1.5.1.4.2 | 3.1.4.2 Configuración de VLAN de aplicación | 8h | 2026-09-16 14:00 | 2026-09-17 13:00 | 289 | 0d |  | DevOps Engineer | 8h | 224,000 |
| 293 | 1.1.5.1.4.3 | 3.1.4.3 Configuración de VLAN de datos | 8h | 2026-09-17 14:00 | 2026-09-18 13:00 | 292 | 0d |  | DevOps Engineer | 8h | 224,000 |
| 294 | 1.1.5.1.4.4 | 3.1.4.4 Configuración de VLAN de gestión | 8h | 2026-09-18 14:00 | 2026-09-21 13:00 | 293 | 0d |  | DevOps Engineer | 8h | 224,000 |
| 295 | 1.1.5.1.4.5 | 3.1.4.5 Testing de aislamiento de redes | 8h | 2026-09-21 14:00 | 2026-09-22 13:00 | 291, 294 | 2d |  | QA Tester | 8h |  |

| ID | WBS | Task | Type | Duration | Start | Finish | Predecessors | Total slack | Free slack | Resources | Work | Cost |
| --- | --- | --- | --- | --- | --- | --- | --- | --- | --- | --- | --- | --- |
| 296 | 1.1.5.1.5 | **Paquete de Trabajo 3.1.5: Sistema de detección de intrusiones (IDS)** |  | 12d | 2026-09-08 14:00 | 2026-09-24 13:00 |  | 0d |  |  | 48h | 1,120,000 |
| 297 | 1.1.5.1.5.1 | 3.1.5.1 Selección e instalación de IDS (Snort/Suricata) |  | 8h | 2026-09-08 14:00 | 2026-09-09 13:00 | 276 | 9d | 0d | Especialista Seguridad | 8h | 224,000 |
| 298 | 1.1.5.1.5.2 | 3.1.5.2 Configuración de reglas de detección |  | 16h | 2026-09-09 14:00 | 2026-09-11 13:00 | 297 | 9d |  | Especialista Seguridad | 16h | 448,000 |
| 299 | 1.1.5.1.5.3 | 3.1.5.3 Implementación de sistema de alertas |  | 8h | 2026-09-21 14:00 | 2026-09-22 13:00 | 294 | 0d |  | DevOps Engineer | 8h | 224,000 |
| 300 | 1.1.5.1.5.4 | 3.1.5.4 Configuración de monitoreo continuo |  | 8h | 2026-09-22 14:00 | 2026-09-23 13:00 | 299 | 0d |  | DevOps Engineer | 8h | 224,000 |
| 301 | 1.1.5.1.5.5 | 3.1.5.5 Testing de detección de amenazas |  | 8h | 2026-09-23 14:00 | 2026-09-24 13:00 | 300 | 0d |  | QA Tester | 8h |  |
| 302 | 1.1.5.1.6 | Termino Entregable 3.1: Infraestructura de Seguridad de Red | milestone | 0h | 2026-09-24 13:00 | 2026-09-24 13:00 | 272, 278, 284, 290, 296 | 0d |  |  |  |  |
| 303 | 1.1.5.2 | **Entregable 3.2: Sistema de Autenticación y Autorización** |  | 14d | 2026-09-24 14:00 | 2026-10-15 13:00 |  | 0d |  |  | 192h | 4,480,000 |
| 304 | 1.1.5.2.1 | **Paquete de Trabajo 3.2.1: Implementación de autenticación 2FA** |  | 5d | 2026-09-24 14:00 | 2026-10-01 13:00 |  | 0d |  |  | 48h | 1,120,000 |
| 305 | 1.1.5.2.1.1 | 3.2.1.1 Diseño de flujo 2FA |  | 8h | 2026-09-24 14:00 | 2026-09-25 13:00 | 302 | 7.5d | 0d | Arquitecto de Software | 8h | 224,000 |
| 306 | 1.1.5.2.1.2 | 3.2.1.2 Implementación de OTP (TOTP) |  | 16h | 2026-09-24 14:00 | 2026-09-28 13:00 | 302 | 0d |  | Desarrollador Backend | 16h | 448,000 |
| 307 | 1.1.5.2.1.3 | 3.2.1.3 Integración con aplicaciones autenticadoras |  | 8h | 2026-09-28 14:00 | 2026-09-29 13:00 | 306 | 0d |  | Desarrollador Backend | 8h | 224,000 |
| 308 | 1.1.5.2.1.4 | 3.2.1.4 Desarrollo de interfaz de configuración |  | 8h | 2026-09-29 14:00 | 2026-09-30 13:00 | 307 | 40.5d | 0d | Desarrollador Frontend | 8h | 224,000 |
| 309 | 1.1.5.2.1.5 | 3.2.1.5 Testing de seguridad 2FA |  | 8h | 2026-09-30 14:00 | 2026-10-01 13:00 | 305, 308 | 40.5d |  | QA Tester | 8h |  |
| 310 | 1.1.5.2.2 | **Paquete de Trabajo 3.2.2: Políticas de contraseñas robustas** |  | 6.5d | 2026-09-24 14:00 | 2026-10-02 18:00 |  | 3d |  |  | 32h | 784,000 |
| 311 | 1.1.5.2.2.1 | 3.2.2.1 Definición de políticas de seguridad |  | 4h | 2026-09-24 14:00 | 2026-09-24 18:00 | 302 | 44.5d | 5.5d | Especialista Seguridad | 4h | 112,000 |
| 312 | 1.1.5.2.2.2 | 3.2.2.2 Implementación de validación de complejidad |  | 8h | 2026-09-29 14:00 | 2026-09-30 13:00 | 307 | 0d |  | Desarrollador Backend | 8h | 224,000 |
| 313 | 1.1.5.2.2.3 | 3.2.2.3 Desarrollo de sistema de expiración |  | 8h | 2026-09-30 14:00 | 2026-10-01 13:00 | 312 | 0d |  | Desarrollador Backend | 8h | 224,000 |
| 314 | 1.1.5.2.2.4 | 3.2.2.4 Implementación de historial de contraseñas |  | 8h | 2026-10-01 14:00 | 2026-10-02 13:00 | 313 | 0d |  | Desarrollador Backend | 8h | 224,000 |
| 315 | 1.1.5.2.2.5 | 3.2.2.5 Testing de validaciones |  | 4h | 2026-10-02 14:00 | 2026-10-02 18:00 | 311, 314 | 39d |  | QA Tester | 4h |  |
| 316 | 1.1.5.2.3 | **Paquete de Trabajo 3.2.3: Sistema de sesiones seguras** |  | 9d | 2026-09-25 14:00 | 2026-10-08 13:00 |  | 0.5d |  |  | 40h | 896,000 |
| 317 | 1.1.5.2.3.1 | 3.2.3.1 Diseño de gestión de sesiones |  | 8h | 2026-09-25 14:00 | 2026-09-28 13:00 | 305 | 7.5d | 7d | Arquitecto de Software | 8h | 224,000 |
| 318 | 1.1.5.2.3.2 | 3.2.3.2 Implementación de timeout automático |  | 8h | 2026-10-02 14:00 | 2026-10-05 13:00 | 314 | 0d |  | Desarrollador Backend | 8h | 224,000 |
| 319 | 1.1.5.2.3.3 | 3.2.3.3 Desarrollo de renovación de tokens |  | 8h | 2026-10-05 14:00 | 2026-10-06 13:00 | 318 | 0d |  | Desarrollador Backend | 8h | 224,000 |
| 320 | 1.1.5.2.3.4 | 3.2.3.4 Implementación de cierre múltiple de sesiones |  | 8h | 2026-10-06 14:00 | 2026-10-07 13:00 | 319 | 0d |  | Desarrollador Backend | 8h | 224,000 |
| 321 | 1.1.5.2.3.5 | 3.2.3.5 Testing de seguridad de sesiones |  | 8h | 2026-10-07 14:00 | 2026-10-08 13:00 | 317, 320 | 0.5d | 0d | QA Tester | 8h |  |

| ID | WBS | Task | Type | Duration | Start | Finish | Predecessors | Total slack | Free slack | Resources | Work | Cost |
| --- | --- | --- | --- | --- | --- | --- | --- | --- | --- | --- | --- | --- |
| 322 | 1.1.5.2.4 | **Paquete de Trabajo 3.2.4: Control de acceso exclusivo OUA** |  | 2.5d | 2026-10-07 14:00 | 2026-10-09 18:00 |  | 0d |  |  | 32h | 784,000 |
| 323 | 1.1.5.2.4.1 | 3.2.4.1 Diseño de restricción organizacional |  | 8h | 2026-10-08 14:00 | 2026-10-09 13:00 | 321 | 0.5d | 0d | Arquitecto de Software | 8h | 224,000 |
| 324 | 1.1.5.2.4.2 | 3.2.4.2 Implementación de validación de organización |  | 8h | 2026-10-07 14:00 | 2026-10-08 13:00 | 320 | 0d |  | Desarrollador Backend | 8h | 224,000 |
| 325 | 1.1.5.2.4.3 | 3.2.4.3 Desarrollo de lista blanca de usuarios |  | 8h | 2026-10-08 14:00 | 2026-10-09 13:00 | 324 | 0d |  | Desarrollador Backend | 8h | 224,000 |
| 326 | 1.1.5.2.4.4 | 3.2.4.4 Configuración de acceso restringido |  | 4h | 2026-10-08 14:00 | 2026-10-08 18:00 | 321 | 1d | 0.5d | DevOps Engineer | 4h | 112,000 |
| 327 | 1.1.5.2.4.5 | 3.2.4.5 Testing de restricciones |  | 4h | 2026-10-09 14:00 | 2026-10-09 18:00 | 323, 325, 326 | 0.5d | 0d | QA Tester | 4h |  |
| 328 | 1.1.5.2.5 | **Paquete de Trabajo 3.2.5: Registro de intentos de acceso fallidos** |  | 3d | 2026-10-09 14:00 | 2026-10-15 13:00 |  | 0d |  |  | 40h | 896,000 |
| 329 | 1.1.5.2.5.1 | 3.2.5.1 Implementación de logging de intentos |  | 8h | 2026-10-09 14:00 | 2026-10-13 13:00 | 325 | 0d |  | Desarrollador Backend | 8h | 224,000 |
| 330 | 1.1.5.2.5.2 | 3.2.5.2 Desarrollo de bloqueo temporal automático |  | 8h | 2026-10-13 14:00 | 2026-10-14 13:00 | 329 | 0d |  | Desarrollador Backend | 8h | 224,000 |
| 331 | 1.1.5.2.5.3 | 3.2.5.3 Configuración de alertas de seguridad |  | 8h | 2026-10-13 09:00 | 2026-10-13 18:00 | 327 | 0.5d |  | DevOps Engineer | 8h | 224,000 |
| 332 | 1.1.5.2.5.4 | 3.2.5.4 Implementación de dashboard de intentos |  | 8h | 2026-10-13 09:00 | 2026-10-13 18:00 | 327 | 0.5d |  | Desarrollador Frontend | 8h | 224,000 |
| 333 | 1.1.5.2.5.5 | 3.2.5.5 Testing de mecanismos de bloqueo |  | 8h | 2026-10-14 14:00 | 2026-10-15 13:00 | 330, 331, 332 | 0d |  | QA Tester | 8h |  |
| 334 | 1.1.5.2.6 | Termino Entregable 3.2: Sistema de Autenticación y Autorización | milestone | 0h | 2026-10-15 13:00 | 2026-10-15 13:00 | 304, 310, 316, 322, 328 | 31.5d |  |  |  |  |
| 335 | 1.1.5.3 | **Entregable 3.3: Sistema de Respaldo y Recuperación** |  | 20.5d | 2026-10-15 14:00 | 2026-11-12 18:00 |  | 0d |  |  | 216h | 5,320,000 |
| 336 | 1.1.5.3.1 | **Paquete de Trabajo 3.3.1: Política de respaldo automático diario** |  | 4d | 2026-10-15 14:00 | 2026-10-21 13:00 |  | 0d |  |  | 40h | 896,000 |
| 337 | 1.1.5.3.1.1 | 3.3.1.1 Diseño de estrategia de backup |  | 8h | 2026-10-15 14:00 | 2026-10-16 13:00 | 333 | 2d |  | Ingeniero de Datos | 8h | 224,000 |
| 338 | 1.1.5.3.1.2 | 3.3.1.2 Configuración de backup PostgreSQL |  | 8h | 2026-10-15 14:00 | 2026-10-16 13:00 | 333 | 0d |  | DevOps Engineer | 8h | 224,000 |
| 339 | 1.1.5.3.1.3 | 3.3.1.3 Configuración de backup InfluxDB |  | 8h | 2026-10-16 14:00 | 2026-10-19 13:00 | 338 | 0d |  | DevOps Engineer | 8h | 224,000 |
| 340 | 1.1.5.3.1.4 | 3.3.1.4 Implementación de programación automática |  | 8h | 2026-10-19 14:00 | 2026-10-20 13:00 | 339 | 0d |  | DevOps Engineer | 8h | 224,000 |
| 341 | 1.1.5.3.1.5 | 3.3.1.5 Testing de backups |  | 8h | 2026-10-20 14:00 | 2026-10-21 13:00 | 337, 340 | 0d |  | QA Tester | 8h |  |
| 342 | 1.1.5.3.2 | **Paquete de Trabajo 3.3.2: Almacenamiento redundante geográfico** |  | 6d | 2026-10-21 14:00 | 2026-10-29 13:00 |  | 0d |  |  | 52h | 1,240,000 |
| 343 | 1.1.5.3.2.1 | 3.3.2.1 Selección de ubicación secundaria |  | 4h | 2026-10-21 14:00 | 2026-10-21 18:00 | 341 | 4.5d |  | Jefe de Proyecto | 4h | 120,000 |
| 344 | 1.1.5.3.2.2 | 3.3.2.2 Configuración de servidor de réplica |  | 16h | 2026-10-21 14:00 | 2026-10-23 13:00 | 341 | 0d |  | DevOps Engineer | 16h | 448,000 |
| 345 | 1.1.5.3.2.3 | 3.3.2.3 Implementación de sincronización automática |  | 16h | 2026-10-23 14:00 | 2026-10-27 13:00 | 344 | 0d |  | DevOps Engineer | 16h | 448,000 |
| 346 | 1.1.5.3.2.4 | 3.3.2.4 Configuración de monitoreo de réplica |  | 8h | 2026-10-27 14:00 | 2026-10-28 13:00 | 345 | 0d |  | DevOps Engineer | 8h | 224,000 |
| 347 | 1.1.5.3.2.5 | 3.3.2.5 Testing de redundancia |  | 8h | 2026-10-28 14:00 | 2026-10-29 13:00 | 343, 346 | 0d |  | QA Tester | 8h |  |

| ID | WBS | Task | Type | Duration | Start | Finish | Predecessors | Total slack | Free slack | Resources | Work | Cost |
| --- | --- | --- | --- | --- | --- | --- | --- | --- | --- | --- | --- | --- |
| 348 | 1.1.5.3.3 | **Paquete de Trabajo 3.3.3: Plan de recuperación ante desastres (DRP)** |  | 5d | 2026-10-29 14:00 | 2026-11-05 13:00 |  | 0d |  |  | 56h | 1,616,000 |
| 349 | 1.1.5.3.3.1 | 3.3.3.1 Análisis de riesgos y amenazas |  | 8h | 2026-10-29 14:00 | 2026-10-30 13:00 | 347 | 2d | 0d | Jefe de Proyecto | 8h | 240,000 |
| 350 | 1.1.5.3.3.2 | 3.3.3.2 Diseño de procedimientos de recuperación |  | 16h | 2026-10-29 14:00 | 2026-11-02 13:00 | 347 | 0d |  | Arquitecto de Software | 16h | 448,000 |
| 351 | 1.1.5.3.3.3 | 3.3.3.3 Documentación de DRP con RTO/RPO |  | 16h | 2026-11-02 14:00 | 2026-11-04 13:00 | 350 | 0d |  | Arquitecto de Software | 16h | 448,000 |
| 352 | 1.1.5.3.3.4 | 3.3.3.4 Definición de roles y responsabilidades |  | 8h | 2026-10-30 14:00 | 2026-11-02 13:00 | 349 | 2d |  | Jefe de Proyecto | 8h | 240,000 |
| 353 | 1.1.5.3.3.5 | 3.3.3.5 Capacitación del equipo en DRP |  | 8h | 2026-11-04 14:00 | 2026-11-05 13:00 | 352, 351 | 0d |  | Jefe de Proyecto | 8h | 240,000 |
| 354 | 1.1.5.3.4 | **Paquete de Trabajo 3.3.4: Pruebas de restauración trimestrales** |  | 2.5d | 2026-11-05 14:00 | 2026-11-09 18:00 |  | 0d |  |  | 36h | 672,000 |
| 355 | 1.1.5.3.4.1 | 3.3.4.1 Diseño de escenarios de prueba |  | 8h | 2026-11-05 14:00 | 2026-11-06 13:00 | 353 | 0d |  | QA Tester | 8h |  |
| 356 | 1.1.5.3.4.2 | 3.3.4.2 Ejecución de primera restauración |  | 8h | 2026-11-05 14:00 | 2026-11-06 13:00 | 353 | 0.5d |  | DevOps Engineer | 8h | 224,000 |
| 357 | 1.1.5.3.4.3 | 3.3.4.3 Validación de integridad de datos |  | 8h | 2026-11-05 14:00 | 2026-11-06 13:00 | 353 | 0.5d |  | Ingeniero de Datos | 8h | 224,000 |
| 358 | 1.1.5.3.4.4 | 3.3.4.4 Documentación de resultados |  | 4h | 2026-11-06 14:00 | 2026-11-06 18:00 | 355 | 0d |  | QA Tester | 4h |  |
| 359 | 1.1.5.3.4.5 | 3.3.4.5 Ajustes y mejoras del proceso |  | 8h | 2026-11-09 09:00 | 2026-11-09 18:00 | 356, 357, 358 | 0d |  | DevOps Engineer | 8h | 224,000 |
| 360 | 1.1.5.3.5 | **Paquete de Trabajo 3.3.5: Versionado de código en Git** |  | 3d | 2026-11-10 09:00 | 2026-11-12 18:00 |  | 0d |  |  | 32h | 896,000 |
| 361 | 1.1.5.3.5.1 | 3.3.5.1 Configuración de repositorio Git |  | 4h | 2026-11-10 09:00 | 2026-11-10 13:00 | 359 | 0d |  | DevOps Engineer | 4h | 112,000 |
| 362 | 1.1.5.3.5.2 | 3.3.5.2 Implementación de estrategia de branching |  | 8h | 2026-11-10 09:00 | 2026-11-10 18:00 | 359 | 2d |  | Arquitecto de Software | 8h | 224,000 |
| 363 | 1.1.5.3.5.3 | 3.3.5.3 Configuración de GitHub/GitLab |  | 8h | 2026-11-10 14:00 | 2026-11-11 13:00 | 361 | 0d |  | DevOps Engineer | 8h | 224,000 |
| 364 | 1.1.5.3.5.4 | 3.3.5.4 Implementación de políticas de commit |  | 4h | 2026-11-11 14:00 | 2026-11-11 18:00 | 363 | 0d |  | DevOps Engineer | 4h | 112,000 |
| 365 | 1.1.5.3.5.5 | 3.3.5.5 Capacitación del equipo en Git |  | 8h | 2026-11-12 09:00 | 2026-11-12 18:00 | 364 | 0d |  | DevOps Engineer | 8h | 224,000 |
| 366 | 1.1.5.3.6 | Termino Entregable 3.3: Sistema de Respaldo y Recuperación | milestone | 0h | 2026-11-12 18:00 | 2026-11-12 18:00 | 336, 342, 348, 354, 360 | 0d |  |  |  |  |
| 367 | 1.1.5.4 | **Entregable 3.4: Cumplimiento Normativo y Auditoría** |  | 32.5d | 2026-10-14 14:00 | 2026-11-27 18:00 |  | 0d |  |  | 208h | 5,608,000 |
| 368 | 1.1.5.4.1 | **Paquete de Trabajo 3.4.1: Cumplimiento Ley 19.628 Protección de Datos** |  | 23.5d | 2026-10-14 14:00 | 2026-11-16 18:00 |  | 6.5d | 4.5d |  | 48h | 1,344,000 |
| 369 | 1.1.5.4.1.1 | 3.4.1.1 Análisis de requerimientos legales |  | 8h | 2026-11-13 09:00 | 2026-11-13 18:00 | 366 | 6.5d | 0d | Asesor Legal | 8h | 224,000 |
| 370 | 1.1.5.4.1.2 | 3.4.1.2 Implementación de medidas de privacidad |  | 16h | 2026-10-14 14:00 | 2026-10-16 13:00 | 330 | 15.5d | 0d | Desarrollador Backend | 16h | 448,000 |
| 371 | 1.1.5.4.1.3 | 3.4.1.3 Desarrollo de gestión de consentimientos |  | 8h | 2026-10-16 14:00 | 2026-10-19 13:00 | 370 | 15.5d | 0d | Desarrollador Backend | 8h | 224,000 |
| 372 | 1.1.5.4.1.4 | 3.4.1.4 Implementación de derechos de usuarios |  | 8h | 2026-10-19 14:00 | 2026-10-20 13:00 | 371 | 15.5d | 0d | Desarrollador Backend | 8h | 224,000 |
| 373 | 1.1.5.4.1.5 | 3.4.1.5 Auditoría de cumplimiento |  | 8h | 2026-11-16 09:00 | 2026-11-16 18:00 | 369 | 6.5d | 0d | Asesor Legal | 8h | 224,000 |

| ID | WBS | Task | Type | Duration | Start | Finish | Predecessors | Total slack | Free slack | Resources | Work | Cost |
| --- | --- | --- | --- | --- | --- | --- | --- | --- | --- | --- | --- | --- |
| 374 | 1.1.5.4.2 | **Paquete de Trabajo 3.4.2: Política de privacidad y términos de uso** |  | 4.5d | 2026-11-13 09:00 | 2026-11-19 13:00 |  | 6.5d | 2d |  | 28h | 784,000 |
| 375 | 1.1.5.4.2.1 | 3.4.2.1 Redacción de política de privacidad |  | 8h | 2026-11-17 09:00 | 2026-11-17 18:00 | 373 | 6.5d | 0d | Asesor Legal | 8h | 224,000 |
| 376 | 1.1.5.4.2.2 | 3.4.2.2 Redacción de términos y condiciones |  | 8h | 2026-11-18 09:00 | 2026-11-18 18:00 | 375 | 6.5d | 0d | Asesor Legal | 8h | 224,000 |
| 377 | 1.1.5.4.2.3 | 3.4.2.3 Implementación en plataforma web |  | 4h | 2026-11-13 09:00 | 2026-11-13 13:00 | 366 | 10d | 0d | Desarrollador Frontend | 4h | 112,000 |
| 378 | 1.1.5.4.2.4 | 3.4.2.4 Desarrollo de aceptación de términos |  | 4h | 2026-11-13 14:00 | 2026-11-13 18:00 | 377 | 10d |  | Desarrollador Frontend | 4h | 112,000 |
| 379 | 1.1.5.4.2.5 | 3.4.2.5 Revisión legal final |  | 4h | 2026-11-19 09:00 | 2026-11-19 13:00 | 376 | 6.5d |  | Asesor Legal | 4h | 112,000 |
| 380 | 1.1.5.4.3 | **Paquete de Trabajo 3.4.3: Sistema de auditoría de operaciones críticas** |  | 19.5d | 2026-10-20 14:00 | 2026-11-16 18:00 |  | 9d | 4.5d |  | 48h | 1,120,000 |
| 381 | 1.1.5.4.3.1 | 3.4.3.1 Diseño de sistema de auditoría |  | 8h | 2026-11-13 09:00 | 2026-11-13 18:00 | 366 | 0d |  | Arquitecto de Software | 8h | 224,000 |
| 382 | 1.1.5.4.3.2 | 3.4.3.2 Implementación de logs inmutables |  | 16h | 2026-10-20 14:00 | 2026-10-22 13:00 | 372 | 15.5d | 0d | Desarrollador Backend | 16h | 448,000 |
| 383 | 1.1.5.4.3.3 | 3.4.3.3 Desarrollo de registro con timestamps UTC |  | 8h | 2026-10-22 14:00 | 2026-10-23 13:00 | 382 | 15.5d | 0d | Desarrollador Backend | 8h | 224,000 |
| 384 | 1.1.5.4.3.4 | 3.4.3.4 Implementación de consulta de auditorías |  | 8h | 2026-10-23 14:00 | 2026-10-26 13:00 | 383 | 24.5d |  | Desarrollador Backend | 8h | 224,000 |
| 385 | 1.1.5.4.3.5 | 3.4.3.5 Testing de trazabilidad completa |  | 8h | 2026-11-16 09:00 | 2026-11-16 18:00 | 381, 383 | 0d |  | QA Tester | 8h |  |
| 386 | 1.1.5.4.4 | **Paquete de Trabajo 3.4.4: Retención de datos según normativa DGA** |  | 4.5d | 2026-11-17 09:00 | 2026-11-23 13:00 |  | 0d |  |  | 40h | 1,120,000 |
| 387 | 1.1.5.4.4.1 | 3.4.4.1 Análisis de normativa DGA |  | 4h | 2026-11-19 09:00 | 2026-11-19 13:00 | 385 | 0d |  | Asesor Legal | 4h | 112,000 |
| 388 | 1.1.5.4.4.2 | 3.4.4.2 Configuración de retención 7 años |  | 8h | 2026-11-17 09:00 | 2026-11-17 18:00 | 385 | 1.5d |  | Ingeniero de Datos | 8h | 224,000 |
| 389 | 1.1.5.4.4.3 | 3.4.4.3 Implementación de archivado de largo plazo |  | 16h | 2026-11-17 09:00 | 2026-11-18 18:00 | 385 | 0.5d |  | DevOps Engineer | 16h | 448,000 |
| 390 | 1.1.5.4.4.4 | 3.4.4.4 Desarrollo de consultas históricas |  | 8h | 2026-11-17 09:00 | 2026-11-17 18:00 | 385 | 1.5d |  | Desarrollador Backend | 8h | 224,000 |
| 391 | 1.1.5.4.4.5 | 3.4.4.5 Validación de cumplimiento |  | 4h | 2026-11-23 09:00 | 2026-11-23 13:00 | 387, 388, 389, 390 | 0d |  | Asesor Legal | 4h | 112,000 |
| 392 | 1.1.5.4.5 | **Paquete de Trabajo 3.4.5: Documentación de políticas de seguridad** |  | 4.5d | 2026-11-23 14:00 | 2026-11-27 18:00 |  | 0d |  |  | 44h | 1,240,000 |
| 393 | 1.1.5.4.5.1 | 3.4.5.1 Redacción de manual de políticas |  | 16h | 2026-11-23 14:00 | 2026-11-25 13:00 | 391 | 0d |  | Especialista Seguridad | 16h | 448,000 |
| 394 | 1.1.5.4.5.2 | 3.4.5.2 Documentación de procedimientos |  | 8h | 2026-11-25 14:00 | 2026-11-26 13:00 | 393 | 0d |  | Especialista Seguridad | 8h | 224,000 |
| 395 | 1.1.5.4.5.3 | 3.4.5.3 Creación de guías de compliance |  | 8h | 2026-11-26 09:00 | 2026-11-26 18:00 | 391 | 0.5d |  | Asesor Legal | 8h | 224,000 |
| 396 | 1.1.5.4.5.4 | 3.4.5.4 Desarrollo de protocolos de respuesta |  | 8h | 2026-11-26 14:00 | 2026-11-27 13:00 | 394 | 0d |  | Especialista Seguridad | 8h | 224,000 |
| 397 | 1.1.5.4.5.5 | 3.4.5.5 Revisión y aprobación final |  | 4h | 2026-11-27 14:00 | 2026-11-27 18:00 | 395, 396 | 0d |  | Jefe de Proyecto | 4h | 120,000 |
| 398 | 1.1.5.4.6 | Termino Entregable 3.4: Cumplimiento Normativo y Auditoría | milestone | 0h | 2026-11-23 13:00 | 2026-11-23 13:00 | 368, 374, 380, 386 | 4.5d |  |  |  |  |
| 399 | 1.1.6 | FIN OBJETIVO 3.0 | milestone | 0h | 2026-11-27 18:00 | 2026-11-27 18:00 | 271, 303, 335, 367 | 0d |  |  |  |  |

| ID | WBS | Task | Duration | Start | Finish | Predecessors | Total slack | Free slack | Resources | Work | Cost |
| --- | --- | --- | --- | --- | --- | --- | --- | --- | --- | --- | --- |
| 400 | 1.1.7 | **OBJETIVO 4.0: Ejecutar Programa de Capacitación y Transferencia Tecnológica** | 73.5d | 2026-11-30 09:00 | 2027-03-16 13:00 |  | 0d |  |  | 932h | 17,560,000 |
| 401 | 1.1.7.1 | **Entregable 4.1: Material Didáctico y Documentación** | 26.5d | 2026-11-30 09:00 | 2027-01-08 13:00 |  | 0d |  |  | 300h | 4,496,000 |
| 402 | 1.1.7.1.1 | **Paquete de Trabajo 4.1.1: Manual de usuario ilustrado (PDF)** | 6d | 2026-11-30 09:00 | 2026-12-07 18:00 |  | 0d |  |  | 64h | 1,008,000 |
| 403 | 1.1.7.1.1.1 | 4.1.1.1 Diseño de estructura del manual | 8h | 2026-11-30 09:00 | 2026-11-30 18:00 | 399 | 0d |  | Diseñador Instruccional | 8h | 64,000 |
| 404 | 1.1.7.1.1.2 | 4.1.1.2 Captura de pantallas del sistema | 8h | 2026-12-01 09:00 | 2026-12-01 18:00 | 403 | 0d |  | Diseñador Instruccional | 8h | 64,000 |
| 405 | 1.1.7.1.1.3 | 4.1.1.3 Redacción de contenido paso a paso | 24h | 2026-12-02 09:00 | 2026-12-04 18:00 | 404 | 0d |  | Diseñador Instruccional | 24h | 192,000 |
| 406 | 1.1.7.1.1.4 | 4.1.1.4 Diseño gráfico y diagramación | 16h | 2026-11-30 09:00 | 2026-12-01 18:00 | 399 | 3d |  | Diseñador Gráfico | 16h | 448,000 |
| 407 | 1.1.7.1.1.5 | 4.1.1.5 Revisión y publicación | 8h | 2026-12-07 09:00 | 2026-12-07 18:00 | 405, 406 | 0d |  | Jefe de Proyecto | 8h | 240,000 |
| 408 | 1.1.7.1.2 | **Paquete de Trabajo 4.1.2: Videos tutoriales en español** | 6d | 2026-12-10 09:00 | 2026-12-17 18:00 |  | 0d |  |  | 80h | 640,000 |
| 409 | 1.1.7.1.2.1 | 4.1.2.1 Planificación de contenido de videos | 8h | 2026-12-10 09:00 | 2026-12-10 18:00 | 407 | 0d |  | Diseñador Instruccional | 8h | 64,000 |
| 410 | 1.1.7.1.2.2 | 4.1.2.2 Grabación de 10-15 tutoriales | 32h | 2026-12-11 09:00 | 2026-12-16 18:00 | 409 | 0d |  | Diseñador Instruccional | 32h | 256,000 |
| 411 | 1.1.7.1.2.3 | 4.1.2.3 Edición de videos | 24h | 2026-12-10 09:00 | 2026-12-14 18:00 | 407 | 1d | 0d | Editor de Video | 24h | 192,000 |
| 412 | 1.1.7.1.2.4 | 4.1.2.4 Subtitulado en español | 8h | 2026-12-15 09:00 | 2026-12-15 18:00 | 411 | 1d |  | Editor de Video | 8h | 64,000 |
| 413 | 1.1.7.1.2.5 | 4.1.2.5 Publicación en plataforma | 8h | 2026-12-17 09:00 | 2026-12-17 18:00 | 410, 412 | 0d |  | Diseñador Instruccional | 8h | 64,000 |
| 414 | 1.1.7.1.3 | **Paquete de Trabajo 4.1.3: Guías de referencia rápida plastificadas** | 4d | 2026-12-18 09:00 | 2026-12-23 18:00 |  | 0d |  |  | 40h | 976,000 |
| 415 | 1.1.7.1.3.1 | 4.1.3.1 Diseño de quick reference cards | 16h | 2026-12-18 09:00 | 2026-12-21 18:00 | 413 | 0d |  | Diseñador Gráfico | 16h | 448,000 |
| 416 | 1.1.7.1.3.2 | 4.1.3.2 Selección de contenido esencial | 8h | 2026-12-18 09:00 | 2026-12-18 18:00 | 413 | 2d |  | Diseñador Instruccional | 8h | 64,000 |
| 417 | 1.1.7.1.3.3 | 4.1.3.3 Diagramación para impresión | 8h | 2026-12-22 09:00 | 2026-12-22 18:00 | 415 | 0d |  | Diseñador Gráfico | 8h | 224,000 |
| 418 | 1.1.7.1.3.4 | 4.1.3.4 Impresión y plastificado | 4h | 2026-12-23 09:00 | 2026-12-23 13:00 | 416, 417 | 0d |  | Jefe de Proyecto | 4h | 120,000 |
| 419 | 1.1.7.1.3.5 | 4.1.3.5 Distribución a usuarios | 4h | 2026-12-23 14:00 | 2026-12-23 18:00 | 418 | 0d |  | Jefe de Proyecto | 4h | 120,000 |
| 420 | 1.1.7.1.4 | **Paquete de Trabajo 4.1.4: Presentaciones de capacitación (PPT)** | 6d | 2026-12-24 09:00 | 2027-01-01 18:00 |  | 0d |  |  | 56h | 784,000 |
| 421 | 1.1.7.1.4.1 | 4.1.4.1 Diseño de plantilla de presentaciones | 8h | 2026-12-24 09:00 | 2026-12-24 18:00 | 419 | 4d |  | Diseñador Gráfico | 8h | 224,000 |
| 422 | 1.1.7.1.4.2 | 4.1.4.2 Creación de contenido teórico | 16h | 2026-12-24 09:00 | 2026-12-28 18:00 | 419 | 0d |  | Diseñador Instruccional | 16h | 128,000 |
| 423 | 1.1.7.1.4.3 | 4.1.4.3 Desarrollo de ejercicios prácticos | 16h | 2026-12-29 09:00 | 2026-12-30 18:00 | 422 | 0d |  | Diseñador Instruccional | 16h | 128,000 |
| 424 | 1.1.7.1.4.4 | 4.1.4.4 Creación de evaluaciones | 8h | 2026-12-31 09:00 | 2026-12-31 18:00 | 423 | 0d |  | Diseñador Instruccional | 8h | 64,000 |
| 425 | 1.1.7.1.4.5 | 4.1.4.5 Revisión y ajustes finales | 8h | 2027-01-01 09:00 | 2027-01-01 18:00 | 421, 424 | 0d |  | Jefe de Proyecto | 8h | 240,000 |

| ID | WBS | Task | Type | Duration | Start | Finish | Predecessors | Total slack | Free slack | Resources | Work | Cost |
| --- | --- | --- | --- | --- | --- | --- | --- | --- | --- | --- | --- | --- |
| 426 | 1.1.7.1.5 | **Paquete de Trabajo 4.1.5: Base de conocimientos web (FAQ)** |  | 4.5d | 2027-01-04 09:00 | 2027-01-08 13:00 |  | 0d |  |  | 60h | 1,088,000 |
| 427 | 1.1.7.1.5.1 | 4.1.5.1 Recopilación de preguntas frecuentes |  | 8h | 2027-01-04 09:00 | 2027-01-04 18:00 | 425 | 1d | 0d | Diseñador Instruccional | 8h | 64,000 |
| 428 | 1.1.7.1.5.2 | 4.1.5.2 Redacción de respuestas |  | 16h | 2027-01-05 09:00 | 2027-01-06 18:00 | 427 | 1d |  | Diseñador Instruccional | 16h | 128,000 |
| 429 | 1.1.7.1.5.3 | 4.1.5.3 Desarrollo de portal web |  | 24h | 2027-01-04 09:00 | 2027-01-06 18:00 | 425 | 0d |  | Desarrollador Frontend | 24h | 672,000 |
| 430 | 1.1.7.1.5.4 | 4.1.5.4 Implementación de búsqueda |  | 8h | 2027-01-07 09:00 | 2027-01-07 18:00 | 429 | 0d |  | Desarrollador Frontend | 8h | 224,000 |
| 431 | 1.1.7.1.5.5 | 4.1.5.5 Testing y publicación |  | 4h | 2027-01-08 09:00 | 2027-01-08 13:00 | 428, 430 | 0d |  | QA Tester | 4h |  |
| 432 | 1.1.7.1.6 | Termino Entregable 4.1: Material Didáctico y Documentación | milestone | 0h | 2027-01-08 13:00 | 2027-01-08 13:00 | 402, 408, 414, 420, 426 | 0d |  |  |  |  |
| 433 | 1.1.7.2 | **Entregable 4.2: Programa de Capacitación Presencial** |  | 23.5d | 2027-01-08 14:00 | 2027-02-10 18:00 |  | 0d |  |  | 196h | 2,168,000 |
| 434 | 1.1.7.2.1 | **Paquete de Trabajo 4.2.1: Plan de capacitación estructurado 40 horas** |  | 5d | 2027-01-08 14:00 | 2027-01-15 13:00 |  | 0d |  |  | 48h | 736,000 |
| 435 | 1.1.7.2.1.1 | 4.2.1.1 Diseño de curriculum de capacitación |  | 16h | 2027-01-08 14:00 | 2027-01-12 13:00 | 432 | 0d |  | Diseñador Instruccional | 16h | 128,000 |
| 436 | 1.1.7.2.1.2 | 4.2.1.2 Planificación de cronograma de sesiones |  | 8h | 2027-01-08 14:00 | 2027-01-11 13:00 | 432 | 3d |  | Jefe de Proyecto | 8h | 240,000 |
| 437 | 1.1.7.2.1.3 | 4.2.1.3 Definición de objetivos por módulo |  | 8h | 2027-01-12 14:00 | 2027-01-13 13:00 | 435 | 0d |  | Diseñador Instruccional | 8h | 64,000 |
| 438 | 1.1.7.2.1.4 | 4.2.1.4 Preparación de materiales |  | 8h | 2027-01-13 14:00 | 2027-01-14 13:00 | 437 | 0d |  | Diseñador Instruccional | 8h | 64,000 |
| 439 | 1.1.7.2.1.5 | 4.2.1.5 Coordinación logística |  | 8h | 2027-01-14 14:00 | 2027-01-15 13:00 | 436, 438 | 0d |  | Jefe de Proyecto | 8h | 240,000 |
| 440 | 1.1.7.2.2 | **Paquete de Trabajo 4.2.2: Capacitación en navegación de interfaz** |  | 4d | 2027-01-15 14:00 | 2027-01-21 13:00 |  | 0d |  |  | 32h | 256,000 |
| 441 | 1.1.7.2.2.1 | 4.2.2.1 Preparación de módulo básico |  | 8h | 2027-01-15 14:00 | 2027-01-18 13:00 | 439 | 0d |  | Capacitador | 8h | 64,000 |
| 442 | 1.1.7.2.2.2 | 4.2.2.2 Sesión presencial de 8 horas |  | 8h | 2027-01-18 14:00 | 2027-01-19 13:00 | 441 | 0d |  | Capacitador | 8h | 64,000 |
| 443 | 1.1.7.2.2.3 | 4.2.2.3 Ejercicios prácticos guiados |  | 8h | 2027-01-19 14:00 | 2027-01-20 13:00 | 442 | 0d |  | Capacitador | 8h | 64,000 |
| 444 | 1.1.7.2.2.4 | 4.2.2.4 Resolución de consultas |  | 4h | 2027-01-20 14:00 | 2027-01-20 18:00 | 443 | 0d |  | Capacitador | 4h | 32,000 |
| 445 | 1.1.7.2.2.5 | 4.2.2.5 Evaluación del módulo |  | 4h | 2027-01-21 09:00 | 2027-01-21 13:00 | 444 | 0d |  | Capacitador | 4h | 32,000 |
| 446 | 1.1.7.2.3 | **Paquete de Trabajo 4.2.3: Capacitación en control remoto de compuertas** |  | 6d | 2027-01-21 14:00 | 2027-01-29 13:00 |  | 0d |  |  | 48h | 384,000 |
| 447 | 1.1.7.2.3.1 | 4.2.3.1 Preparación de módulo avanzado |  | 8h | 2027-01-21 14:00 | 2027-01-22 13:00 | 445 | 0d |  | Capacitador | 8h | 64,000 |
| 448 | 1.1.7.2.3.2 | 4.2.3.2 Sesión presencial de 12 horas |  | 12h | 2027-01-22 14:00 | 2027-01-25 18:00 | 447 | 0d |  | Capacitador | 12h | 96,000 |
| 449 | 1.1.7.2.3.3 | 4.2.3.3 Simulaciones de operación |  | 16h | 2027-01-26 09:00 | 2027-01-27 18:00 | 448 | 0d |  | Capacitador | 16h | 128,000 |
| 450 | 1.1.7.2.3.4 | 4.2.3.4 Prácticas con sistema real |  | 8h | 2027-01-28 09:00 | 2027-01-28 18:00 | 449 | 0d |  | Capacitador | 8h | 64,000 |
| 451 | 1.1.7.2.3.5 | 4.2.3.5 Evaluación de competencias |  | 4h | 2027-01-29 09:00 | 2027-01-29 13:00 | 450 | 0d |  | Capacitador | 4h | 32,000 |

| ID | WBS | Task | Type | Duration | Start | Finish | Predecessors | Total slack | Free slack | Resources | Work | Cost |
| --- | --- | --- | --- | --- | --- | --- | --- | --- | --- | --- | --- | --- |
| 452 | 1.1.7.2.4 | **Paquete de Trabajo 4.2.4: Capacitación en generación de reportes** |  | 4d | 2027-01-29 14:00 | 2027-02-04 13:00 |  | 0d |  |  | 32h | 256,000 |
| 453 | 1.1.7.2.4.1 | 4.2.4.1 Preparación de módulo de reportes |  | 8h | 2027-01-29 14:00 | 2027-02-01 13:00 | 451 | 0d |  | Capacitador | 8h | 64,000 |
| 454 | 1.1.7.2.4.2 | 4.2.4.2 Sesión presencial de 8 horas |  | 8h | 2027-02-01 14:00 | 2027-02-02 13:00 | 453 | 0d |  | Capacitador | 8h | 64,000 |
| 455 | 1.1.7.2.4.3 | 4.2.4.3 Ejercicios de consultas |  | 8h | 2027-02-02 14:00 | 2027-02-03 13:00 | 454 | 0d |  | Capacitador | 8h | 64,000 |
| 456 | 1.1.7.2.4.4 | 4.2.4.4 Práctica de exportación |  | 4h | 2027-02-03 14:00 | 2027-02-03 18:00 | 455 | 0d |  | Capacitador | 4h | 32,000 |
| 457 | 1.1.7.2.4.5 | 4.2.4.5 Evaluación del módulo |  | 4h | 2027-02-04 09:00 | 2027-02-04 13:00 | 456 | 0d |  | Capacitador | 4h | 32,000 |
| 458 | 1.1.7.2.5 | **Paquete de Trabajo 4.2.5: Evaluación y certificación de competencias** |  | 4.5d | 2027-02-04 14:00 | 2027-02-10 18:00 |  | 0d |  |  | 36h | 536,000 |
| 459 | 1.1.7.2.5.1 | 4.2.5.1 Diseño de evaluación práctica |  | 8h | 2027-02-04 14:00 | 2027-02-05 13:00 | 457 | 0d |  | Diseñador Instruccional | 8h | 64,000 |
| 460 | 1.1.7.2.5.2 | 4.2.5.2 Ejecución de evaluación final |  | 8h | 2027-02-05 14:00 | 2027-02-08 13:00 | 459 | 0d |  | Capacitador | 8h | 64,000 |
| 461 | 1.1.7.2.5.3 | 4.2.5.3 Corrección y análisis de resultados |  | 8h | 2027-02-08 14:00 | 2027-02-09 13:00 | 460 | 0d |  | Capacitador | 8h | 64,000 |
| 462 | 1.1.7.2.5.4 | 4.2.5.4 Diseño e impresión de certificados |  | 8h | 2027-02-09 14:00 | 2027-02-10 13:00 | 461 | 0d |  | Diseñador Gráfico | 8h | 224,000 |
| 463 | 1.1.7.2.5.5 | 4.2.5.5 Ceremonia de certificación |  | 4h | 2027-02-10 14:00 | 2027-02-10 18:00 | 462 | 0d |  | Jefe de Proyecto | 4h | 120,000 |
| 464 | 1.1.7.2.6 | Termino Entregable 4.2: Programa de Capacitación Presencial | milestone | 0h | 2027-02-10 18:00 | 2027-02-10 18:00 | 434, 440, 446, 452, 458 | 0d |  |  |  |  |
| 465 | 1.1.7.3 | **Entregable 4.3: Sistema de Soporte Técnico** |  | 40d | 2027-01-08 09:00 | 2027-03-04 18:00 |  | 7.5d |  |  | 200h | 4,256,000 |
| 466 | 1.1.7.3.1 | **Paquete de Trabajo 4.3.1: Portal web de soporte y tickets** |  | 27d | 2027-01-08 09:00 | 2027-02-15 18:00 |  | 20.5d | 13d |  | 40h | 928,000 |
| 467 | 1.1.7.3.1.1 | 4.3.1.1 Selección de plataforma de tickets |  | 8h | 2027-02-11 09:00 | 2027-02-11 18:00 | 464 | 22.5d |  | Jefe de Proyecto | 8h | 240,000 |
| 468 | 1.1.7.3.1.2 | 4.3.1.2 Configuración del sistema |  | 8h | 2027-02-11 09:00 | 2027-02-11 18:00 | 464 | 0d |  | Desarrollador Backend | 8h | 224,000 |
| 469 | 1.1.7.3.1.3 | 4.3.1.3 Personalización de interfaz |  | 8h | 2027-01-08 09:00 | 2027-01-08 18:00 | 430 | 24d |  | Desarrollador Frontend | 8h | 224,000 |
| 470 | 1.1.7.3.1.4 | 4.3.1.4 Configuración de categorías y prioridades |  | 8h | 2027-02-12 09:00 | 2027-02-12 18:00 | 468, 469 | 0d |  | Jefe de Proyecto | 8h | 240,000 |
| 471 | 1.1.7.3.1.5 | 4.3.1.5 Testing del portal |  | 8h | 2027-02-15 09:00 | 2027-02-15 18:00 | 470 | 0d |  | QA Tester | 8h |  |
| 472 | 1.1.7.3.2 | **Paquete de Trabajo 4.3.2: Línea telefónica de soporte dedicada** |  | 4d | 2027-02-16 09:00 | 2027-02-19 18:00 |  | 0d |  |  | 40h | 944,000 |
| 473 | 1.1.7.3.2.1 | 4.3.2.1 Contratación de línea telefónica |  | 8h | 2027-02-16 09:00 | 2027-02-16 18:00 | 471 | 7.5d | 0d | Jefe de Proyecto | 8h | 240,000 |
| 474 | 1.1.7.3.2.2 | 4.3.2.2 Configuración de sistema de llamadas |  | 8h | 2027-02-16 09:00 | 2027-02-16 18:00 | 471 | 0d |  | DevOps Engineer | 8h | 224,000 |
| 475 | 1.1.7.3.2.3 | 4.3.2.3 Definición de horarios de atención |  | 8h | 2027-02-17 09:00 | 2027-02-17 18:00 | 473 | 7.5d | 0d | Jefe de Proyecto | 8h | 240,000 |
| 476 | 1.1.7.3.2.4 | 4.3.2.4 Capacitación de equipo de soporte |  | 8h | 2027-02-18 09:00 | 2027-02-18 18:00 | 475 | 7.5d | 0d | Jefe de Proyecto | 8h | 240,000 |
| 477 | 1.1.7.3.2.5 | 4.3.2.5 Testing de línea |  | 8h | 2027-02-19 09:00 | 2027-02-19 18:00 | 474, 476 | 7.5d | 0d | QA Tester | 8h |  |

| ID | WBS | Task | Type | Duration | Start | Finish | Predecessors | Total slack | Free slack | Resources | Work | Cost |
| --- | --- | --- | --- | --- | --- | --- | --- | --- | --- | --- | --- | --- |
| 478 | 1.1.7.3.3 | **Paquete de Trabajo 4.3.3: Grupo WhatsApp de soporte** |  | 5d | 2027-02-22 09:00 | 2027-02-26 18:00 |  | 7.5d | 4d |  | 40h | 960,000 |
| 479 | 1.1.7.3.3.1 | 4.3.3.1 Creación de grupo |  | 8h | 2027-02-22 09:00 | 2027-02-22 18:00 | 477 | 7.5d | 0d | Jefe de Proyecto | 8h | 240,000 |
| 480 | 1.1.7.3.3.2 | 4.3.3.2 Incorporación de usuarios |  | 8h | 2027-02-23 09:00 | 2027-02-23 18:00 | 479 | 7.5d | 0d | Jefe de Proyecto | 8h | 240,000 |
| 481 | 1.1.7.3.3.3 | 4.3.3.3 Definición de normas del grupo |  | 8h | 2027-02-24 09:00 | 2027-02-24 18:00 | 480 | 7.5d | 0d | Jefe de Proyecto | 8h | 240,000 |
| 482 | 1.1.7.3.3.4 | 4.3.3.4 Configuración de equipo de respuesta |  | 8h | 2027-02-25 09:00 | 2027-02-25 18:00 | 481 | 7.5d | 0d | Jefe de Proyecto | 8h | 240,000 |
| 483 | 1.1.7.3.3.5 | 4.3.3.5 Monitoreo inicial |  | 8h | 2027-02-26 09:00 | 2027-02-26 18:00 | 482 | 7.5d | 0d | Técnico de Soporte | 8h |  |
| 484 | 1.1.7.3.4 | **Paquete de Trabajo 4.3.4: Acompañamiento en terreno 3 meses** |  | 5d | 2027-02-26 09:00 | 2027-03-04 18:00 |  | 7.5d | 0d |  | 40h | 240,000 |
| 485 | 1.1.7.3.4.1 | 4.3.4.1 Planificación de visitas semanales |  | 8h | 2027-02-26 09:00 | 2027-02-26 18:00 | 482 | 7.5d | 0d | Jefe de Proyecto | 8h | 240,000 |
| 486 | 1.1.7.3.4.2 | 4.3.4.2 Ejecución de 12 visitas (4h c/u) |  | 8h | 2027-03-01 09:00 | 2027-03-01 18:00 | 483 | 7.5d | 0d | Técnico de Soporte | 8h |  |
| 487 | 1.1.7.3.4.3 | 4.3.4.3 Resolución de dudas operativas |  | 8h | 2027-03-02 09:00 | 2027-03-02 18:00 | 486 | 7.5d | 0d | Técnico de Soporte | 8h |  |
| 488 | 1.1.7.3.4.4 | 4.3.4.4 Optimización de uso del sistema |  | 8h | 2027-03-03 09:00 | 2027-03-03 18:00 | 487 | 7.5d | 0d | Técnico de Soporte | 8h |  |
| 489 | 1.1.7.3.4.5 | 4.3.4.5 Documentación de incidencias |  | 8h | 2027-03-04 09:00 | 2027-03-04 18:00 | 488 | 7.5d |  | Técnico de Soporte | 8h |  |
| 490 | 1.1.7.3.5 | **Paquete de Trabajo 4.3.5: SLA de respuesta por prioridad** |  | 12d | 2027-02-17 09:00 | 2027-03-04 18:00 |  | 0d |  |  | 40h | 1,184,000 |
| 491 | 1.1.7.3.5.1 | 4.3.5.1 Definición de niveles de prioridad |  | 8h | 2027-03-01 09:00 | 2027-03-01 18:00 | 485 | 7.5d | 0d | Jefe de Proyecto | 8h | 240,000 |
| 492 | 1.1.7.3.5.2 | 4.3.5.2 Establecimiento de tiempos SLA |  | 8h | 2027-03-02 09:00 | 2027-03-02 18:00 | 491 | 7.5d | 0d | Jefe de Proyecto | 8h | 240,000 |
| 493 | 1.1.7.3.5.3 | 4.3.5.3 Configuración de alertas automáticas |  | 8h | 2027-02-17 09:00 | 2027-02-17 18:00 | 474 | 0d |  | DevOps Engineer | 8h | 224,000 |
| 494 | 1.1.7.3.5.4 | 4.3.5.4 Documentación de SLA |  | 8h | 2027-03-03 09:00 | 2027-03-03 18:00 | 492 | 7.5d | 0d | Jefe de Proyecto | 8h | 240,000 |
| 495 | 1.1.7.3.5.5 | 4.3.5.5 Comunicación a usuarios |  | 8h | 2027-03-04 09:00 | 2027-03-04 18:00 | 494 | 7.5d |  | Jefe de Proyecto | 8h | 240,000 |
| 496 | 1.1.7.3.6 | Termino Entregable 4.3: Sistema de Soporte Técnico | milestone | 0h | 2027-03-04 18:00 | 2027-03-04 18:00 | 466, 472, 478, 484, 490 | 7.5d |  |  |  |  |
| 497 | 1.1.7.4 | **Entregable 4.4: Transferencia de Conocimiento Técnico** |  | 22.5d | 2027-02-12 09:00 | 2027-03-16 13:00 |  | 0d |  |  | 236h | 6,640,000 |
| 498 | 1.1.7.4.1 | **Paquete de Trabajo 4.4.1: Repositorio Git con código fuente completo** |  | 5.5d | 2027-02-12 09:00 | 2027-02-19 13:00 |  | 4d |  |  | 44h | 1,232,000 |
| 499 | 1.1.7.4.1.1 | 4.4.1.1 Limpieza y organización del código |  | 16h | 2027-02-12 09:00 | 2027-02-15 18:00 | 468 | 19.5d | 0d | Desarrollador Backend | 16h | 448,000 |
| 500 | 1.1.7.4.1.2 | 4.4.1.2 Creación de README completo |  | 8h | 2027-02-16 09:00 | 2027-02-16 18:00 | 499 | 19.5d |  | Arquitecto de Software | 8h | 224,000 |
| 501 | 1.1.7.4.1.3 | 4.4.1.3 Configuración de acceso para OUA |  | 4h | 2027-02-18 09:00 | 2027-02-18 13:00 | 493 | 0d |  | DevOps Engineer | 4h | 112,000 |
| 502 | 1.1.7.4.1.4 | 4.4.1.4 Documentación de estructura del proyecto |  | 8h | 2027-02-18 14:00 | 2027-02-19 13:00 | 501 | 17d |  | Arquitecto de Software | 8h | 224,000 |
| 503 | 1.1.7.4.1.5 | 4.4.1.5 Capacitación en uso de Git |  | 8h | 2027-02-18 14:00 | 2027-02-19 13:00 | 501 | 0d |  | DevOps Engineer | 8h | 224,000 |

| ID | WBS | Task | Type | Duration | Start | Finish | Predecessors | Total slack | Free slack | Resources | Work | Cost |
| --- | --- | --- | --- | --- | --- | --- | --- | --- | --- | --- | --- | --- |
| 504 | 1.1.7.4.2 | **Paquete de Trabajo 4.4.2: Manuales técnicos de arquitectura del sistema** |  | 11.5d | 2027-02-19 14:00 | 2027-03-08 18:00 |  | 0d |  |  | 56h | 1,584,000 |
| 505 | 1.1.7.4.2.1 | 4.4.2.1 Documentación de arquitectura general |  | 16h | 2027-02-19 14:00 | 2027-02-23 13:00 | 503 | 0d |  | Arquitecto de Software | 16h | 448,000 |
| 506 | 1.1.7.4.2.2 | 4.4.2.2 Documentación de componentes |  | 16h | 2027-02-23 14:00 | 2027-02-25 13:00 | 505 | 0d |  | Arquitecto de Software | 16h | 448,000 |
| 507 | 1.1.7.4.2.3 | 4.4.2.3 Documentación de integraciones |  | 8h | 2027-02-25 14:00 | 2027-02-26 13:00 | 506 | 0d |  | Arquitecto de Software | 8h | 224,000 |
| 508 | 1.1.7.4.2.4 | 4.4.2.4 Documentación de decisiones técnicas |  | 8h | 2027-02-26 14:00 | 2027-03-01 13:00 | 507 | 0d |  | Arquitecto de Software | 8h | 224,000 |
| 509 | 1.1.7.4.2.5 | 4.4.2.5 Revisión y publicación |  | 8h | 2027-03-08 09:00 | 2027-03-08 18:00 | 508 | 0d |  | Jefe de Proyecto | 8h | 240,000 |
| 510 | 1.1.7.4.3 | **Paquete de Trabajo 4.4.3: Diagramas de red y topología** |  | 14d | 2027-02-19 14:00 | 2027-03-11 13:00 |  | 0d |  |  | 36h | 1,008,000 |
| 511 | 1.1.7.4.3.1 | 4.4.3.1 Creación de diagrama de infraestructura |  | 8h | 2027-03-09 09:00 | 2027-03-09 18:00 | 509 | 0d |  | Arquitecto de Software | 8h | 224,000 |
| 512 | 1.1.7.4.3.2 | 4.4.3.2 Documentación de conectividad |  | 8h | 2027-02-19 14:00 | 2027-02-22 13:00 | 503 | 5.5d | 0d | DevOps Engineer | 8h | 224,000 |
| 513 | 1.1.7.4.3.3 | 4.4.3.3 Diagramas de segmentación de red |  | 8h | 2027-02-22 14:00 | 2027-02-23 13:00 | 512 | 5.5d | 0d | DevOps Engineer | 8h | 224,000 |
| 514 | 1.1.7.4.3.4 | 4.4.3.4 Documentación de flujo de datos |  | 8h | 2027-03-10 09:00 | 2027-03-10 18:00 | 511 | 0d |  | Arquitecto de Software | 8h | 224,000 |
| 515 | 1.1.7.4.3.5 | 4.4.3.5 Revisión y actualización |  | 4h | 2027-03-11 09:00 | 2027-03-11 13:00 | 514 | 0d |  | Arquitecto de Software | 4h | 112,000 |
| 516 | 1.1.7.4.4 | **Paquete de Trabajo 4.4.4: Procedimientos de mantenimiento** |  | 15d | 2027-02-23 14:00 | 2027-03-16 13:00 |  | 0d |  |  | 64h | 1,808,000 |
| 517 | 1.1.7.4.4.1 | 4.4.4.1 Guía de troubleshooting |  | 16h | 2027-02-23 14:00 | 2027-02-25 13:00 | 513 | 5.5d | 0d | DevOps Engineer | 16h | 448,000 |
| 518 | 1.1.7.4.4.2 | 4.4.4.2 Procedimientos de actualización |  | 16h | 2027-02-25 14:00 | 2027-03-01 13:00 | 517 | 5.5d | 0d | DevOps Engineer | 16h | 448,000 |
| 519 | 1.1.7.4.4.3 | 4.4.4.3 Guías de gestión de backups |  | 8h | 2027-03-01 14:00 | 2027-03-02 13:00 | 518 | 5.5d | 0d | DevOps Engineer | 8h | 224,000 |
| 520 | 1.1.7.4.4.4 | 4.4.4.4 Protocolos de respuesta a incidentes |  | 16h | 2027-03-11 14:00 | 2027-03-15 13:00 | 515 | 0d |  | Especialista Seguridad | 16h | 448,000 |
| 521 | 1.1.7.4.4.5 | 4.4.4.5 Revisión y aprobación |  | 8h | 2027-03-15 14:00 | 2027-03-16 13:00 | 519, 520 | 0d |  | Jefe de Proyecto | 8h | 240,000 |
| 522 | 1.1.7.4.5 | **Paquete de Trabajo 4.4.5: Llaves de acceso y credenciales** |  | 10d | 2027-03-02 14:00 | 2027-03-16 13:00 |  | 0d |  |  | 36h | 1,008,000 |
| 523 | 1.1.7.4.5.1 | 4.4.5.1 Inventario de credenciales |  | 8h | 2027-03-02 14:00 | 2027-03-03 13:00 | 519 | 5.5d | 0d | DevOps Engineer | 8h | 224,000 |
| 524 | 1.1.7.4.5.2 | 4.4.5.2 Generación de credenciales administrativas |  | 8h | 2027-03-03 14:00 | 2027-03-04 13:00 | 523 | 5.5d | 0d | DevOps Engineer | 8h | 224,000 |
| 525 | 1.1.7.4.5.3 | 4.4.5.3 Documentación de accesos |  | 8h | 2027-03-04 14:00 | 2027-03-05 13:00 | 524 | 5.5d | 0d | DevOps Engineer | 8h | 224,000 |
| 526 | 1.1.7.4.5.4 | 4.4.5.4 Transferencia segura de llaves SSH |  | 4h | 2027-03-05 14:00 | 2027-03-05 18:00 | 525 | 5.5d | 0d | DevOps Engineer | 4h | 112,000 |
| 527 | 1.1.7.4.5.5 | 4.4.5.5 Capacitación en gestión de credenciales |  | 8h | 2027-03-08 09:00 | 2027-03-08 18:00 | 526 | 5.5d |  | DevOps Engineer | 8h | 224,000 |
| 528 | 1.1.7.4.5.6 | Termino Entregable 4.4: Transferencia de Conocimiento Técnico | milestone | 0h | 2027-03-16 13:00 | 2027-03-16 13:00 | 498, 504, 510, 516 | 0d |  |  |  |  |
| 529 | 1.1.8 | FIN OBJETIVO 4.0 | milestone | 0h | 2027-03-16 13:00 | 2027-03-16 13:00 | 401, 433, 465, 497 | 0d |  |  |  |  |
| 530 | 1.2 | Fin del Proyecto | milestone | 0h | 2027-03-16 13:00 | 2027-03-16 13:00 | 139, 269, 399, 529 | 0d |  |  |  |  |
